# CardioGuardian

How a schedule from MS Project changed from version to version. A marks actual dates.

## Version 1 (saved 2021-05-30)

Note of the change: Starting to work on project plan

| ID | WBS | Task | Duration | Start | Finish | Predecessors | Total float | Constraint |
| --- | --- | --- | --- | --- | --- | --- | --- | --- |
| 1 | 1 | **WP1 - Upravljanje projektom** | 524d? | 2021-05-05 | 2023-05-22 |  | 0d |  |
| 2 | 1.1 | **Organizacija početnog sastanka** | 5d | 2021-05-05 | 2021-05-12 |  | 0d |  |
| 3 |  | Dogovor u vezi datuma sastanka sa svim predstavnicima participanata | 1d | 2021-05-05 | 2021-05-06 |  | 0d |  |
| 4 |  | Ugovaranje smeštaja i prevoza za participante | 1d | 2021-05-06 | 2021-05-07 | 3 | 0d | start no earlier than 2021-05-06 |
| 5 |  | Zakup prostora i početak pripreme plana sastanka | 1d | 2021-05-07 | 2021-05-10 | 4 | 0d |  |
| 6 |  | Razvoj plana sastanka | 1d | 2021-05-10 | 2021-05-11 | 5 | 0d |  |
| 7 |  | Završetak organizacije sastanka | 1d | 2021-05-11 | 2021-05-12 | 6 | 0d |  |
| 8 | 1.2 | **Kick-off sastanak** | 5d | 2021-05-12 | 2021-05-19 | 2 |  |  |
| 9 |  | Upoznavanje članova i pregled ciljeva projekta | 1d | 2021-05-12 | 2021-05-13 |  | 0d |  |
| 10 |  | Pregled budzeta | 2d | 2021-05-13 | 2021-05-17 | 9 | 0d |  |
| 11 |  | Podela posla i definisanje rokova | 2d | 2021-05-17 | 2021-05-19 | 10 | 0d |  |
| 12 | 1.3 | **Upravljanje timovima** | 5d | 2021-05-19 | 2021-05-26 | 8 | 0d |  |
| 13 |  | Formiranje timova | 3d | 2021-05-19 | 2021-05-24 |  | 2d |  |
| 14 |  | Međusobno upoznavanje | 3d | 2021-05-19 | 2021-05-24 |  | 2d |  |
| 15 |  | Predstavljanje rasporeda dnevnih, nedeljnih i mesečnih sastanaka | 3d | 2021-05-19 | 2021-05-24 |  | 2d |  |
| 16 |  | Pojedinačno predstavljanje | 3d | 2021-05-19 | 2021-05-24 |  | 0d |  |
| 17 |  | Objašnjavanje strukture projekta članovima | 2d | 2021-05-24 | 2021-05-26 | 16 | 0d |  |
| 18 |  | Uspostavljanje pravila tima | 2d | 2021-05-24 | 2021-05-26 | 16 | 0d |  |
| 19 |  | Uspostavljanje dnevne rutine | 2d | 2021-05-24 | 2021-05-26 | 16 | 0d |  |
| 20 |  | Uspostavljanje načina komunikacije | 2d | 2021-05-24 | 2021-05-26 | 16 | 0d |  |
| 21 | 1.4 | **Logistika** | 509d | 2021-05-26 | 2023-05-22 | 12 | 0d |  |
| 22 |  | Podela odgovornosti i pisanje RASCI matrice | 7d | 2021-05-26 | 2021-06-04 |  | 0d |  |
| 23 |  | Definisanje parametara za praćenje napretka projekta | 3d | 2021-06-04 | 2021-06-09 | 22 | 0d |  |
| 24 |  | Pisanje neophodnih dokumenata | 5d | 2021-06-09 | 2021-06-16 | 23 | 0d |  |
| 25 |  | Pisanje PBS i RBS | 15d | 2021-06-16 | 2021-07-07 | 24 | 0d |  |
| 26 |  | Definisanje merljivosti i definicije završenog | 6d | 2021-07-07 | 2021-07-15 | 25 | 0d |  |
| 27 | 1.4.6 | **Kvalitet** | 15d | 2021-07-15 | 2021-08-05 | 26 | 0d |  |
| 28 |  | Planiranje kvaliteta | 12d | 2021-07-15 | 2021-08-02 |  | 0d |  |
| 29 |  | Postavljanje standarda kvaliteta | 3d | 2021-08-02 | 2021-08-05 | 28 | 0d |  |
| 30 | 1.4.7 | **Menadžment rizika** | 12d | 2021-08-05 | 2021-08-23 | 27 | 0d |  |
| 31 |  | Detaljna analiza do sada pronaćenih rizika | 5d | 2021-08-05 | 2021-08-12 | 27 | 0d |  |
| 32 |  | Formiranje metoda za ublažavanje ili eliminisanje rizika | 5d | 2021-08-12 | 2021-08-19 | 31 | 0d |  |
| 33 |  | Upozoravanje članova tima sa predviđenim rizicima | 2d | 2021-08-19 | 2021-08-23 | 32 | 0d |  |
| 34 | 1.4.8 | **Kontrola i monitoring** | 446d | 2021-08-23 | 2023-05-22 | 33 | 0d |  |
| 35 |  | Praćenje napretka projekta | 446d | 2021-08-23 | 2023-05-22 |  | 0d |  |
| 36 |  | Održavanje redovnih sastanaka | 446d | 2021-08-23 | 2023-05-22 |  | 0d |  |
| 37 |  | Upravljanje kvalitetom | 446d | 2021-08-23 | 2023-05-22 |  | 0d |  |
| 38 |  | Rešavanje nepredviđenih situacija | 446d | 2021-08-23 | 2023-05-22 |  | 0d |  |
| 39 |  | Upravljanje javnim nabavkama | 446d | 2021-08-23 | 2023-05-22 |  | 0d |  |
| 40 |  | Praćenje rashoda | 446d | 2021-08-23 | 2023-05-22 |  | 0d |  |
| 41 |  | Kontrola rezultata radnih paketa | 446d | 2021-08-23 | 2023-05-22 |  | 0d |  |
| 42 |  | Održavanje liste problema | 446d | 2021-08-23 | 2023-05-22 |  | 0d |  |
| 43 |  | Praćenje rizika | 446d | 2021-08-23 | 2023-05-22 |  | 0d |  |
| 44 |  | Obrada feedbacka od radnika | 446d | 2021-08-23 | 2023-05-22 |  | 0d |  |
| 45 | 1.5 | **Održavanje sastanaka o napretku na projektu** | 513d | 2021-05-05 | 2023-05-05 |  |  |  |
| 46 | 1.5.1 | **Sastanak nakon prvih 6 meseci** | 1d | 2021-11-05 | 2021-11-08 |  |  |  |
| 47 |  | M1: Izveštaj o napretku na projektu 1.1 | 0d | 2021-11-08 | 2021-11-08 |  | 389d | start no earlier than 2021-11-08 |
| 48 | 1.5.2 | **Sastanak nakon drugih 6 meseci** | 1d | 2022-05-05 | 2022-05-06 |  |  |  |
| 49 |  | M2: Izveštaj o napretku na projektu 1.2 | 0d | 2022-05-06 | 2022-05-06 |  | 263d | start no earlier than 2022-05-06 |
| 50 | 1.5.3 | **Sastanak nakon trećih 6 meseci** | 1d | 2022-11-05 | 2022-11-07 |  |  |  |
| 51 |  | M3: Izveštaj o napretku na projektu 2.1 | 0d | 2022-11-07 | 2022-11-07 |  | 133d | start no earlier than 2022-11-07 |
| 52 | 1.5.4 | **Sastanak nakon poslednjih 6 meseci** | 1d | 2023-05-03 | 2023-05-04 |  |  |  |
| 53 |  | M4: Izveštaj o napretku na projektu 2.2 | 0d | 2023-05-04 | 2023-05-04 |  | 10d | start no earlier than 2023-05-04 |
| 54 | 1.5.5 | **Organizaija Brainstorming-a** | 5d | 2021-05-05 | 2021-05-12 |  | 512d |  |
| 55 |  | Dogovor u vezi datuma sastanka sa svim predstavnicima participanata | 1d | 2021-05-05 | 2021-05-06 |  | 512d |  |
| 56 |  | Ugovaranje smeštaja i prevoza za participante | 1d | 2021-05-06 | 2021-05-07 | 55 | 512d |  |
| 57 |  | Zakup prostora i početak pripreme plana sastanka | 1d | 2021-05-07 | 2021-05-10 | 56 | 512d |  |
| 58 |  | Razvoj plana sastanka | 1d | 2021-05-10 | 2021-05-11 | 57 | 512d |  |
| 59 |  | Završetak organizacije sastanka | 1d | 2021-05-11 | 2021-05-12 | 58 | 512d |  |
| 60 |  | Održavanje Brainstorming-a | 7d | 2021-05-12 | 2021-05-21 | 54 | 512d |  |
| 61 | 1.5.7 | **Organizacija završnog sastanka** | 5d | 2023-04-18 | 2023-04-25 |  |  |  |
| 62 |  | Dogovor u vezi datuma sastanka sa svim predstavnicima participanata | 1d | 2023-04-18 | 2023-04-19 |  | 18d |  |
| 63 |  | Ugovaranje smeštaja i prevoza za participante | 1d | 2023-04-19 | 2023-04-20 | 62 | 18d |  |
| 64 |  | Zakup prostora i početak pripreme plana sastanka | 1d | 2023-04-20 | 2023-04-21 | 63 | 18d |  |
| 65 |  | Razvoj plana sastanka | 1d | 2023-04-21 | 2023-04-24 | 64 | 18d |  |
| 66 |  | Završetak organizacije sastanka | 1d | 2023-04-24 | 2023-04-25 | 65 | 18d |  |
| 67 | 1.5.8 | **Održavanje završnog sastanka** | 5d | 2023-04-27 | 2023-05-05 | 61 |  |  |
| 68 |  | M5: Konačan izveštaj celokupnog projekta | 0d | 2023-05-05 | 2023-05-05 |  | 11d | start no earlier than 2023-05-05 |
| 69 | 2 | **WP2 - Analiza korisničkih zahteva** | 87d | 2021-05-05 | 2021-09-03 |  | 180d |  |
| 70 | 2.1 | **Ispitivanje i analiza dosadašnjih postignuća** | 24d | 2021-05-05 | 2021-06-08 |  | 180d |  |

| ID | WBS | Task | Duration | Start | Finish | Predecessors | Total float |
| --- | --- | --- | --- | --- | --- | --- | --- |
| 71 | 2.1.1 | **Odlazak u Budimpeštu** | 7d | 2021-05-05 | 2021-05-14 |  | 180d |
| 72 |  | Sastanak sa autorima naučnih radova | 7d | 2021-05-05 | 2021-05-14 |  | 517d |
| 73 |  | Obilazak bolnice | 7d | 2021-05-05 | 2021-05-14 |  | 517d |
| 74 | 2.1.2 | **Odlazak u Bazel** | 7d | 2021-05-14 | 2021-05-25 | 71 | 180d |
| 75 |  | Sastanak sa autorima naučnih radova | 7d | 2021-05-14 | 2021-05-25 |  | 449d |
| 76 |  | Obilazak bolnice | 7d | 2021-05-14 | 2021-05-25 |  | 449d |
| 77 |  | Testiranje dosadašnjih postignuća | 10d | 2021-05-25 | 2021-06-08 | 71, 74 | 437d |
| 78 | 2.2 | **Sprovođenje anketa korisnika** | 15d | 2021-06-08 | 2021-06-29 | 70 | 180d |
| 79 |  | Odabir lokacija za sprovođenje ankete | 3d | 2021-06-08 | 2021-06-11 |  | 460d |
| 80 |  | Formiranje pitanja | 5d | 2021-06-08 | 2021-06-15 |  | 437d |
| 81 |  | Prikupljanje odgovora | 10d | 2021-06-15 | 2021-06-29 | 80 | 437d |
| 82 | 2.3 | **Analiza odgovora anketa** | 10d | 2021-06-29 | 2021-07-13 | 78 | 180d |
| 83 |  | Unošenje rezultata | 5d | 2021-06-29 | 2021-07-06 |  | 437d |
| 84 |  | Generisanje grafikona odgovora | 2d | 2021-07-06 | 2021-07-08 | 83 | 437d |
| 85 |  | Analiza grafikona | 3d | 2021-07-08 | 2021-07-13 | 84 | 437d |
| 86 | 2.4 | **Definisanje potrebnih funkcionalnosti softvera** | 17d | 2021-07-13 | 2021-08-05 | 82 | 180d |
| 87 |  | Definisanje glavnih korisničkih funkcionalnosti | 10d | 2021-07-13 | 2021-07-27 |  | 437d |
| 88 |  | Konsultacije sa lekarima | 10d | 2021-07-13 | 2021-07-27 |  | 444d |
| 89 |  | Definisanje dodatnih funkcionalnosti | 7d | 2021-07-27 | 2021-08-05 | 87 | 437d |
| 90 | 2.5 | **Definisanje potrebnih funkcionalnosti hardvera** | 17d | 2021-08-05 | 2021-08-30 | 86 | 180d |
| 91 |  | Definisanje glavnih korisničkih funkcionalnosti | 10d | 2021-08-05 | 2021-08-19 |  | 180d |
| 92 |  | Konsultacije sa lekarima | 10d | 2021-08-05 | 2021-08-19 |  | 187d |
| 93 |  | Definisanje dodatnih funkcionalnosti | 7d | 2021-08-19 | 2021-08-30 | 91 | 180d |
| 94 | 2.6 | **Izbor odgovarajućeg PMLC modela** | 4d | 2021-08-30 | 2021-09-03 | 90, 86 | 180d |
| 95 |  | Analiza potrebnog tima | 3d | 2021-08-30 | 2021-09-02 |  | 180d |
| 96 |  | Analiza dinamike postojećih timova | 3d | 2021-08-30 | 2021-09-02 |  | 180d |
| 97 |  | Odabir konkretnog modela | 1d | 2021-09-02 | 2021-09-03 | 95, 96 | 180d |
| 98 | 3 | **WP3 - Analiza i detalji dizajna sistema** | 64d | 2021-09-03 | 2021-12-02 | 69 | 180d |
| 99 |  | Identifikovanje komponenti sistema | 10d | 2021-09-03 | 2021-09-17 |  | 180d |
| 100 | 3.2 | **Dizajn celokupnog sistema** | 14d | 2021-09-17 | 2021-10-07 | 99 | 180d |
| 101 |  | Dizajn softverskih komponenti | 14d | 2021-09-17 | 2021-10-07 |  | 180d |
| 102 |  | Dizajn hardverskih komponenti | 14d | 2021-09-17 | 2021-10-07 |  | 180d |
| 103 | 3.3 | **Detaljan dizajn sistema** | 10d | 2021-10-07 | 2021-10-21 | 100 | 180d |
| 104 |  | Detaljan dizajn softverskih komponenti | 10d | 2021-10-07 | 2021-10-21 |  | 180d |
| 105 |  | Detaljan dizajn hardverskih komponenti | 10d | 2021-10-07 | 2021-10-21 |  | 180d |
| 106 |  | Izrada prototipa | 30d | 2021-10-21 | 2021-12-02 | 103 | 180d |
| 107 |  | M6: Prototip | 0d | 2021-12-02 | 2021-12-02 | 106 | 180d |
| 108 | 4 | **WP4 - Razvijanje hardverske komponente (uređaja)** | 191d | 2021-12-02 | 2022-09-01 | 98 | 182d |
| 109 |  | Odlazak u Dablin - tim bilding | 10d | 2021-12-02 | 2021-12-16 |  | 182d |
| 110 |  | Razvoj senzora | 30d | 2021-12-16 | 2022-01-28 | 109 | 182d |
| 111 |  | Razvoj pojedinačnih hardverskih jedinica | 90d | 2022-01-28 | 2022-06-07 | 110 | 182d |
| 112 |  | Integracija hardverskog uređaja | 30d | 2022-06-07 | 2022-07-19 | 111 | 182d |
| 113 | 4.5 | **Testiranje hardverske komponente** | 31d | 2022-07-19 | 2022-09-01 | 112 | 182d |
| 114 |  | Testiranje funkcionalnosti | 21d | 2022-07-19 | 2022-08-18 |  | 182d |
| 115 |  | Identifikovanje potencijalnih nedostataka | 7d | 2022-08-18 | 2022-08-29 | 114 | 185d |
| 116 |  | Ispitivanje verovatnoće kvara | 10d | 2022-08-18 | 2022-09-01 | 114 | 182d |
| 117 |  | Ispitivanje životnog veka uređaja | 5d | 2022-08-18 | 2022-08-25 | 114 | 187d |
| 118 |  | M7: Hardverski uređaj | 0d | 2022-09-01 | 2022-09-01 | 113 | 182d |
| 119 | 5 | **WP5 - Razvijanje softverske komponente** | 193d | 2021-12-02 | 2022-09-05 | 98 | 180d |
| 120 |  | Odlazak u Cirih - tim bilding | 10d | 2021-12-02 | 2021-12-16 |  | 180d |
| 121 |  | Osposobljavanje servera | 18d | 2021-12-16 | 2022-01-12 | 120 | 180d |
| 122 |  | Realizacija baze podataka | 21d | 2022-01-12 | 2022-02-10 | 121 | 180d |
| 123 | 5.4 | **Obučavanje neuralne mreže** | 76d | 2022-02-10 | 2022-05-31 | 122 | 180d |
| 124 |  | Priprema podataka, čišćenje i otklanjanje grešaka | 12d | 2022-02-10 | 2022-03-02 |  | 180d |
| 125 |  | Vizuelizacija podataka i analiza | 14d | 2022-03-02 | 2022-03-22 | 124 | 180d |
| 126 |  | Treniranje modela - podešavanje hiperparametara | 40d | 2022-03-22 | 2022-05-17 | 125 | 180d |
| 127 |  | Testiranje modela | 10d | 2022-05-17 | 2022-05-31 | 126 | 180d |
| 128 |  | Realizacija aplikacije | 40d | 2022-05-31 | 2022-07-26 | 123 | 180d |
| 129 |  | Integracija softverskog uređaja | 24d | 2022-05-31 | 2022-07-04 | 123 | 196d |
| 130 | 5.7 | **Testiranje softverske komponente** | 28d | 2022-07-26 | 2022-09-05 | 129, 128 | 180d |
| 131 |  | Testiranje funkcionalnosti | 21d | 2022-07-26 | 2022-08-25 |  | 180d |
| 132 |  | Pronalaženje nedostataka i njihovo otklanjanje | 7d | 2022-08-25 | 2022-09-05 | 131 | 180d |
| 133 |  | M8: Aplikacija | 0d | 2022-09-05 | 2022-09-05 | 128, 130 | 180d |
| 134 | 6 | **WP6 - Integracija sistema** | 0d | 2022-09-05 | 2022-09-05 | 119 | 180d |
| 135 |  | M9: Izveštaj uspešnosti integracije | 0d | 2022-09-05 | 2022-09-05 |  | 180d |
| 136 |  | M10: Integrisan sistem - funkcionalna celina | 0d | 2022-09-05 | 2022-09-05 |  | 180d |
| 137 | 7 | **WP7 - Testiranje sistema** | 0d | 2022-09-05 | 2022-09-05 | 134 | 180d |
| 138 |  | M11: Izveštaj testiranja | 0d | 2022-09-05 | 2022-09-05 |  | 180d |

## Version 2 (saved 2021-05-30)

Note of the change: Update Projektni_plan.mpp

Last finish 2023-05-22 → 2023-05-05 (-17d).

Added:

| ID | Task | Duration | Start | Finish | Predecessors |
| --- | --- | --- | --- | --- | --- |
| 111 | Razvoj procesora | 60d | 2021-12-16 | 2022-03-15 | 109 |
| 112 | Razvoj jedinice za napajanje | 15d | 2022-03-15 | 2022-04-06 | 111 |
| 122 | **Upravljanje nabavkama** | 14d | 2021-12-02 | 2021-12-22 |  |
| 123 | Raspisivanje nabavke | 5d | 2021-12-02 | 2021-12-09 |  |
| 124 | Evaluacija nabavke | 3d | 2021-12-09 | 2021-12-14 | 123 |
| 125 | Izbor dobavljača | 3d | 2021-12-14 | 2021-12-17 | 124 |
| 126 | Ugovaranje sa dobavljačem | 3d | 2021-12-17 | 2021-12-22 | 125 |
| 140 | Integracija softverske komponente | 20d | 2022-08-26 | 2022-09-23 |  |
| 141 | Integracija hardverske komponente | 20d | 2022-09-23 | 2022-10-21 | 140 |
| 143 | Integracija celokupnog sistema | 20d | 2022-10-21 | 2022-11-21 | 141 |
| 146 | **Jedinično testiranje** | 17d | 2022-11-21 | 2022-12-14 |  |
| 147 | Planiranje testova | 3d | 2022-11-21 | 2022-11-24 |  |
| 148 | Izrada testova | 7d | 2022-11-24 | 2022-12-05 | 147 |
| 149 | Testiranje | 7d | 2022-12-05 | 2022-12-14 | 148 |
| 150 | **Integraciono testiranje** | 17d | 2022-12-14 | 2023-01-06 | 146 |
| 151 | Planiranje testova | 3d | 2022-12-14 | 2022-12-19 |  |
| 152 | Izrada testova | 7d | 2022-12-19 | 2022-12-28 | 151 |
| 153 | Testiranje | 7d | 2022-12-28 | 2023-01-06 | 152 |
| 154 | **Sistemsko testiranje** | 17d | 2023-01-06 | 2023-01-31 | 150 |
| 155 | Planiranje testova | 3d | 2023-01-06 | 2023-01-11 |  |
| 156 | Izrada testova | 7d | 2023-01-11 | 2023-01-20 | 155 |
| 157 | Testiranje | 7d | 2023-01-20 | 2023-01-31 | 156 |
| 158 | **Performansno testiranje** | 5d | 2023-01-31 | 2023-02-07 | 154 |
| 159 | Testiranje opterećenja - Load testing | 5d | 2023-01-31 | 2023-02-07 |  |
| 160 | Stres testiranje - Stress testing | 5d | 2023-01-31 | 2023-02-07 |  |
| 161 | Testiranje sigurnosti sistema | 10d | 2023-01-31 | 2023-02-14 | 154 |
| 162 | **Test prihvatanja od strane korisnika** | 14d | 2023-01-31 | 2023-02-22 | 154 |
| 163 | Alfa testiranje | 7d | 2023-01-31 | 2023-02-09 |  |
| 164 | Beta testiranje | 7d | 2023-02-09 | 2023-02-22 | 163 |
| 166 | **WP8 - Дисиминација и експлоатација** | 43d | 2023-02-22 | 2023-04-26 | 145 |
| 167 | Izrada promotivnog materijala | 3d | 2023-02-22 | 2023-02-27 |  |
| 168 | Izrada vizuelnog projekta | 3d | 2023-02-22 | 2023-02-27 |  |
| 169 | Objavljivanje u medijima i na društvenim mrežama | 3d | 2023-02-22 | 2023-02-27 |  |
| 170 | **Organizovanje i učestvovanje na konferencijama** | 40d | 2023-02-27 | 2023-04-26 | 167, 168, 169 |
| 171 | Konferencija u San Francisku | 10d | 2023-02-27 | 2023-03-13 |  |
| 172 | Konferencija u Amsterdamu | 10d | 2023-03-13 | 2023-03-28 | 171 |
| 173 | Konferencija u Rimu | 7d | 2023-03-28 | 2023-04-06 | 172 |
| 174 | Konferencija u Londonu | 10d | 2023-03-28 | 2023-04-11 | 172 |
| 175 | Konferencija u Tokiju | 10d | 2023-04-11 | 2023-04-26 | 174 |

Removed: 112 Integracija hardverskog uređaja; 129 Integracija softverskog uređaja

Changed:

| ID | Task | Start | Finish | Duration | Total float | Predecessors | Other |
| --- | --- | --- | --- | --- | --- | --- | --- |
| 1 | **WP1 - Upravljanje projektom** |  | 2023-05-22 → 2023-05-05 (-17d) | 524d? → 511d |  |  |  |
| 21 | **Logistika** |  | 2023-05-22 → 2023-04-26 (-26d) | 509d → 490d | 0d → 6d |  |  |
| 34 | **Kontrola i monitoring** | 2021-08-23 → 2021-06-09 (-75d) | 2023-05-22 → 2023-04-26 (-26d) | 446d → 480d | 0d → 6d | 33 → 23 |  |
| 35 | Praćenje napretka projekta | 2021-08-23 → 2021-06-09 (-75d) | 2023-05-22 → 2023-04-26 (-26d) | 446d → 480d | 0d → 6d |  |  |
| 36 | Održavanje redovnih sastanaka | 2021-08-23 → 2021-06-09 (-75d) | 2023-05-22 → 2023-04-26 (-26d) | 446d → 480d | 0d → 6d |  |  |
| 37 | Upravljanje kvalitetom | 2021-08-23 → 2021-06-09 (-75d) | 2023-05-22 → 2023-04-26 (-26d) | 446d → 480d | 0d → 6d |  |  |
| 38 | Rešavanje nepredviđenih situacija | 2021-08-23 → 2021-06-09 (-75d) | 2023-05-22 → 2023-04-26 (-26d) | 446d → 480d | 0d → 6d |  |  |
| 39 | Upravljanje javnim nabavkama | 2021-08-23 → 2021-06-09 (-75d) | 2023-05-22 → 2023-04-26 (-26d) | 446d → 480d | 0d → 6d |  |  |
| 40 | Praćenje rashoda | 2021-08-23 → 2021-06-09 (-75d) | 2023-05-22 → 2023-04-26 (-26d) | 446d → 480d | 0d → 6d |  |  |
| 41 | Kontrola rezultata radnih paketa | 2021-08-23 → 2021-06-09 (-75d) | 2023-05-22 → 2023-04-26 (-26d) | 446d → 480d | 0d → 6d |  |  |
| 42 | Održavanje liste problema | 2021-08-23 → 2021-06-09 (-75d) | 2023-05-22 → 2023-04-26 (-26d) | 446d → 480d | 0d → 6d |  |  |
| 43 | Praćenje rizika | 2021-08-23 → 2021-06-09 (-75d) | 2023-05-22 → 2023-04-26 (-26d) | 446d → 480d | 0d → 6d |  |  |
| 44 | Obrada feedbacka od radnika | 2021-08-23 → 2021-06-09 (-75d) | 2023-05-22 → 2023-04-26 (-26d) | 446d → 480d | 0d → 6d |  |  |
| 45 | **Održavanje sastanaka o napretku na projektu** |  |  | 513d → 511d |  |  |  |
| 54 | **Organizaija Brainstorming-a** | 2021-05-05 → 2022-04-27 (+357d) | 2021-05-12 → 2022-05-04 (+357d) |  | 512d → none |  |  |
| 55 | Dogovor u vezi datuma sastanka sa svim predstavnicima participanata | 2021-05-05 → 2022-04-27 (+357d) | 2021-05-06 → 2022-04-28 (+357d) |  | 512d → 248d |  |  |
| 56 | Ugovaranje smeštaja i prevoza za participante | 2021-05-06 → 2022-04-28 (+357d) | 2021-05-07 → 2022-04-29 (+357d) |  | 512d → 248d |  |  |
| 57 | Zakup prostora i početak pripreme plana sastanka | 2021-05-07 → 2022-04-29 (+357d) | 2021-05-10 → 2022-05-02 (+357d) |  | 512d → 248d |  |  |
| 58 | Razvoj plana sastanka | 2021-05-10 → 2022-05-02 (+357d) | 2021-05-11 → 2022-05-03 (+357d) |  | 512d → 248d |  |  |
| 59 | Završetak organizacije sastanka | 2021-05-11 → 2022-05-03 (+357d) | 2021-05-12 → 2022-05-04 (+357d) |  | 512d → 248d |  |  |
| 60 | Održavanje Brainstorming-a | 2021-05-12 → 2022-05-04 (+357d) | 2021-05-21 → 2022-05-13 (+357d) |  | 512d → 248d |  |  |
| 108 | **WP4 - Razvijanje hardverske komponente (uređaja)** |  | 2022-09-01 → 2022-08-26 (-6d) | 191d → 186d | 182d → 174d |  |  |
| 113 | Razvoj dodatnih hardverskih jedinica | 2022-01-28 → 2022-04-06 (+68d) | 2022-06-07 → 2022-07-13 (+36d) | 90d → 70d | 182d → 174d | 110 → 112 | was named Razvoj pojedinačnih hardverskih jedinica |
| 114 | **Testiranje hardverske komponente** | 2022-07-19 → 2022-07-13 (-6d) | 2022-09-01 → 2022-08-26 (-6d) |  | 182d → 174d | Integracija hardverskog uređaja → 110, 111, 112, 113 |  |
| 115 | Testiranje funkcionalnosti | 2022-07-19 → 2022-07-13 (-6d) | 2022-08-18 → 2022-08-12 (-6d) |  | 182d → 174d |  |  |
| 116 | Identifikovanje potencijalnih nedostataka | 2022-08-18 → 2022-08-12 (-6d) | 2022-08-29 → 2022-08-23 (-6d) |  | 185d → 177d |  |  |
| 117 | Ispitivanje verovatnoće kvara | 2022-08-18 → 2022-08-12 (-6d) | 2022-09-01 → 2022-08-26 (-6d) |  | 182d → 174d |  |  |
| 118 | Ispitivanje životnog veka uređaja | 2022-08-18 → 2022-08-12 (-6d) | 2022-08-25 → 2022-08-19 (-6d) |  | 187d → 179d |  |  |
| 119 | M7: Hardverski uređaj | 2022-09-01 → 2022-08-26 (-6d) | 2022-09-01 → 2022-08-26 (-6d) |  | 182d → 174d |  |  |
| 120 | **WP5 - Razvijanje softverske komponente** |  | 2022-09-05 → 2022-08-26 (-10d) | 193d → 186d | 180d → 6d |  |  |
| 127 | Osposobljavanje servera | 2021-12-16 → 2021-12-22 (+6d) | 2022-01-12 → 2022-01-18 (+6d) |  | 180d → 6d | 121 → 122 |  |
| 128 | Realizacija baze podataka | 2022-01-12 → 2022-01-18 (+6d) | 2022-02-10 → 2022-02-17 (+7d) | 21d → 20d | 180d → 6d |  |  |
| 129 | **Obučavanje neuralne mreže** | 2022-02-10 → 2022-02-17 (+7d) | 2022-05-31 → 2022-05-30 (-1d) | 76d → 71d | 180d → 6d |  |  |
| 130 | Priprema podataka, čišćenje i otklanjanje grešaka | 2022-02-10 → 2022-02-17 (+7d) | 2022-03-02 → 2022-03-07 (+5d) |  | 180d → 6d |  |  |
| 131 | Vizuelizacija podataka i analiza | 2022-03-02 → 2022-03-07 (+5d) | 2022-03-22 → 2022-03-28 (+6d) |  | 180d → 6d |  |  |
| 132 | Treniranje modela - podešavanje hiperparametara | 2022-03-22 → 2022-03-28 (+6d) | 2022-05-17 → 2022-05-16 (-1d) | 40d → 35d | 180d → 6d |  |  |
| 133 | Testiranje modela | 2022-05-17 → 2022-05-16 (-1d) | 2022-05-31 → 2022-05-30 (-1d) |  | 180d → 6d |  |  |
| 134 | Realizacija aplikacije | 2022-05-31 → 2022-05-30 (-1d) | 2022-07-26 → 2022-07-18 (-8d) | 40d → 35d | 180d → 6d |  |  |
| 135 | **Testiranje softverske komponente** | 2022-07-26 → 2022-07-18 (-8d) | 2022-09-05 → 2022-08-26 (-10d) |  | 180d → 6d | Integracija softverskog uređaja, 134 → 134 |  |
| 136 | Testiranje funkcionalnosti | 2022-07-26 → 2022-07-18 (-8d) | 2022-08-25 → 2022-08-17 (-8d) |  | 180d → 6d |  |  |
| 137 | Pronalaženje nedostataka i njihovo otklanjanje | 2022-08-25 → 2022-08-17 (-8d) | 2022-09-05 → 2022-08-26 (-10d) |  | 180d → 6d |  |  |
| 138 | M8: Aplikacija | 2022-09-05 → 2022-08-26 (-10d) | 2022-09-05 → 2022-08-26 (-10d) |  | 180d → 6d |  |  |
| 139 | **WP6 - Integracija sistema** | 2022-09-05 → 2022-08-26 (-10d) | 2022-09-05 → 2022-11-21 (+77d) | 0d → 60d | 180d → 6d |  |  |
| 142 | M9: Izveštaj uspešnosti integracije | 2022-09-05 → 2022-10-21 (+46d) | 2022-09-05 → 2022-10-21 (+46d) |  | 180d → 26d | none → 140, 141 |  |
| 144 | M10: Integrisan sistem - funkcionalna celina | 2022-09-05 → 2022-11-21 (+77d) | 2022-09-05 → 2022-11-21 (+77d) |  | 180d → 6d | none → 143 |  |
| 145 | **WP7 - Testiranje sistema** | 2022-09-05 → 2022-11-21 (+77d) | 2022-09-05 → 2023-02-22 (+170d) | 0d → 65d | 180d → 6d |  |  |
| 165 | M11: Izveštaj testiranja | 2022-09-05 → 2023-02-22 (+170d) | 2022-09-05 → 2023-02-22 (+170d) |  | 180d → 6d | none → 162 |  |

## Version 3 (saved 2021-05-31)

Note of the change: Update Projektni_plan.mpp

Last finish stays 2023-05-05.

Changed:

| ID | Task | Other |
| --- | --- | --- |
| 1 | **WP1 - Upravljanje projektom** | resources none → Advokatske usluge [0.1%] |
| 8 | **Kick-off sastanak** | resources none → Dnevnica i noćenje u Beogradu (5 dana) [0.1%]; Povratna avionska karta (Stokholm-Beograd) [0.1%]; Povratna avionska karta (Cirih - Beograd) [0.1%]; Povratna avionska karta (Dablin - Beograd) [0.1%]; Povratna avionska karta (Lviv - Beograd) [0.1%]; Povratna avionska karta (Milano - Beograd) [0.1%]; Povratna avionska karta (Monkstovn - Beograd) [0.1%] |
| 60 | Održavanje Brainstorming-a | resources none → Dnevnica i noćenje u Cirihu (7 dana) [0.1%]; Povratna avionska karta (Stokholm - Cirih) [0.1%]; Povratna avionska karta (Beograd - Cirih) [0.1%]; Povratna avionska karta (Dablin - Cirih) [0.1%]; Povratna avionska karta (Lviv - Cirih) [0.1%]; Povratna avionska karta (Milano - Cirih) [0.1%]; Povratna avionska karta (Monkstovn - Cirih) [0.1%] |
| 67 | **Održavanje završnog sastanka** | resources none → Dnevnica i noćenje u Beogradu (5 dana) [0.1%]; Povratna avionska karta (Stokholm-Beograd) [0.1%]; Povratna avionska karta (Cirih - Beograd) [0.1%]; Povratna avionska karta (Dablin - Beograd) [0.1%]; Povratna avionska karta (Lviv - Beograd) [0.1%]; Povratna avionska karta (Milano - Beograd) [0.1%]; Povratna avionska karta (Monkstovn - Beograd) [0.1%] |
| 69 | **WP2 - Analiza korisničkih zahteva** | resources none → SpiraPlan [0.1%] |
| 71 | **Odlazak u Budimpeštu** | resources none → Dnevnica i noćenje u Budimpešti (7 dana) [0.1%]; Povratna avionska karta (Lviv - Budimpešta) [0.1%]; Povratna avionska karta (Stokholm - Budimpešta) [0.1%] |
| 74 | **Odlazak u Bazel** | resources none → Dnevnica i noćenje u Bazelu (7 dana) [0.1%]; Povratna avionska karta (Beograd - Bazel) [0.1%]; Povratna avionska karta (Lviv - Bazel) [0.1%]; Povratna avionska karta (Stokholm - Bazel) [0.1%] |
| 98 | **WP3 - Analiza i detalji dizajna sistema** | resources none → SpiraPlan [0.1%] |
| 108 | **WP4 - Razvijanje hardverske komponente (uređaja)** | resources none → Autodesk Product Design & Manufacturing Collection - AutoCad [0.1%]; Biohemijski analizator [1 Komad]; Krvni pritisak senzor [2 Komad]; Senzor za merenje otkucaja srca [2 Komad]; Sistem za kontrolu glukoze u krvi [2 Komad]; Štampač i skener [4 Komad]; Štipaljke za EKG - visokokvalitetni kablovi i elektrode [12 Komad]; Organizacija tim bildinga [0.1%] |
| 109 | Odlazak u Dablin - tim bilding | resources none → Dnevnica i noćenje u Dablinu (10 dana) [0.1%]; Povratna avionska karta (Beograd - Dablin) [0.1%]; Povratna avionska karta (Cirih - Dablin) [0.1%] |
| 120 | **WP5 - Razvijanje softverske komponente** | resources none → Grafička karta [8 Komad]; Mobilni telefon - napredne funkcionalnosti [2 Komad]; Mobilni telefon - osnovne funkcionalnosti [2 Komad]; Oracle DBMS [0.1%]; Računar [12 Komad]; Server [2 Komad]; Windows Server Datacenter 2019 [0.1%]; Google cloud - TPU (tensor Processing Unit) [0.1%]; Organizacija tim bildinga [0.1%]; Usluge Equinix data centra [0.1%] |
| 121 | Odlazak u Cirih - tim bilding | resources none → Dnevnica i noćenje u Cirihu (10 dana) [0.1%]; Povratna avionska karta (Beograd - Cirih) [0.1%]; Povratna avionska karta (Lviv - Cirih) [0.1%] |
| 145 | **WP7 - Testiranje sistema** | resources none → SpiraTest [0.1%] |
| 166 | **WP8 - Дисиминација и експлоатација** | resources none → Izrada promotivnog materijala [0.1%]; Usluge firme za marketing [0.1%]; Advokatske usluge [0.1%] |
| 171 | Konferencija u San Francisku | resources none → Dnevnica i noćenje u San Francisku (10 dana) [0.1%]; Povratna avionska karta (Beograd - San Francisko) [0.1%]; Povratna avionska karta (Cirih - San Francisko) [0.1%]; Povratna avionska karta (Dablin - San Francisko) [0.1%] |
| 172 | Konferencija u Amsterdamu | resources none → Dnevnica i noćenje u Amsterdamu (10 dana) [0.1%]; Povratna avionska karta (Beograd - Amsterdam) [0.1%]; Povratna avionska karta (Cirih - Amsterdam) [0.1%] |
| 173 | Konferencija u Rimu | resources none → Dnevnica i noćenje u Rimu (7 dana) [0.1%]; Povratna avionska karta (Beograd - Rim) [0.1%]; Povratna avionska karta (Dablin - Rim) [0.1%] |
| 174 | Konferencija u Londonu | resources none → Dnevnica i noćenje u Londonu (10 dana) [0.1%]; Povratna avionska karta (Beograd - London) [0.1%]; Povratna avionska karta (Cirih - London) [0.1%] |
| 175 | Konferencija u Tokiju | resources none → Dnevnica i noćenje u Tokiju (10 dana) [0.1%]; Povratna avionska karta (Beograd - Tokio) [0.1%]; Povratna avionska karta (Cirih - Tokio) [0.1%]; Povratna avionska karta (Dablin - Tokio) [0.1%] |

## Version 4 (saved 2021-05-31)

Note of the change: Update Projektni_plan.mpp

Last finish stays 2023-05-05.

Changed:

| ID | Task | Start | Finish | Duration | Total float | Predecessors | Other |
| --- | --- | --- | --- | --- | --- | --- | --- |
| 1 | **WP1 - Upravljanje projektom** |  |  | 511d → 511d? |  |  |  |
| 45 | **Održavanje sastanaka o napretku na projektu** |  |  | 511d → 511d? |  |  |  |
| 67 | Održavanje završnog sastanka | 2023-04-27 → 2023-04-25 (-2d) | 2023-05-05 → 2023-05-03 (-2d) |  | none → 2d |  |  |
| 68 | M5: Konačan izveštaj celokupnog projekta | 2023-05-05 → 2023-05-03 (-2d) | 2023-05-05 → 2023-05-03 (-2d) |  | 0d → 2d | none → 67 | constraint start no earlier than 2023-05-05 → none |

## Version 5 (saved 2021-05-31)

Note of the change: Update Projektni_plan.mpp

Last finish stays 2023-05-05.

Changed:

| ID | Task | Start | Finish | Duration | Total float |
| --- | --- | --- | --- | --- | --- |
| 1 | **WP1 - Upravljanje projektom** |  |  | 511d? → 511d |  |
| 45 | **Održavanje sastanaka o napretku na projektu** |  |  | 511d? → 511d |  |
| 108 | **WP4 - Razvijanje hardverske komponente (uređaja)** |  | 2022-08-26 → 2022-08-17 (-9d) | 186d → 179d | 174d → 181d |
| 112 | Razvoj jedinice za napajanje |  | 2022-04-06 → 2022-04-05 (-1d) | 15d → 14d | 174d → 181d |
| 113 | Razvoj dodatnih hardverskih jedinica | 2022-04-06 → 2022-04-05 (-1d) | 2022-07-13 → 2022-07-05 (-8d) | 70d → 65d | 174d → 181d |
| 114 | **Testiranje hardverske komponente** | 2022-07-13 → 2022-07-05 (-8d) | 2022-08-26 → 2022-08-17 (-9d) | 31d → 30d | 174d → 181d |
| 115 | Testiranje funkcionalnosti | 2022-07-13 → 2022-07-05 (-8d) | 2022-08-12 → 2022-08-03 (-9d) | 21d → 20d | 174d → 181d |
| 116 | Identifikovanje potencijalnih nedostataka | 2022-08-12 → 2022-08-03 (-9d) | 2022-08-23 → 2022-08-12 (-11d) |  | 177d → 184d |
| 117 | Ispitivanje verovatnoće kvara | 2022-08-12 → 2022-08-03 (-9d) | 2022-08-26 → 2022-08-17 (-9d) |  | 174d → 181d |
| 118 | Ispitivanje životnog veka uređaja | 2022-08-12 → 2022-08-03 (-9d) | 2022-08-19 → 2022-08-10 (-9d) |  | 179d → 186d |
| 119 | M7: Hardverski uređaj | 2022-08-26 → 2022-08-17 (-9d) | 2022-08-26 → 2022-08-17 (-9d) |  | 174d → 181d |
| 120 | **WP5 - Razvijanje softverske komponente** |  | 2022-08-26 → 2022-09-01 (+6d) | 186d → 190d | 6d → 5d |
| 129 | **Obučavanje neuralne mreže** |  | 2022-05-30 → 2022-06-02 (+3d) | 71d → 74d | 6d → 5d |
| 132 | Treniranje modela - podešavanje hiperparametara |  | 2022-05-16 → 2022-05-19 (+3d) | 35d → 38d | 6d → 5d |
| 133 | Testiranje modela | 2022-05-16 → 2022-05-19 (+3d) | 2022-05-30 → 2022-06-02 (+3d) |  | 6d → 5d |
| 134 | Realizacija aplikacije | 2022-05-30 → 2022-06-02 (+3d) | 2022-07-18 → 2022-07-21 (+3d) |  | 6d → 5d |
| 135 | **Testiranje softverske komponente** | 2022-07-18 → 2022-07-21 (+3d) | 2022-08-26 → 2022-09-01 (+6d) | 28d → 29d | 6d → 5d |
| 136 | Testiranje funkcionalnosti | 2022-07-18 → 2022-07-21 (+3d) | 2022-08-17 → 2022-08-23 (+6d) | 21d → 22d | 6d → 5d |
| 137 | Pronalaženje nedostataka i njihovo otklanjanje | 2022-08-17 → 2022-08-23 (+6d) | 2022-08-26 → 2022-09-01 (+6d) |  | 6d → 5d |
| 138 | M8: Aplikacija | 2022-08-26 → 2022-09-01 (+6d) | 2022-08-26 → 2022-09-01 (+6d) |  | 174d → 170d |
| 139 | **WP6 - Integracija sistema** | 2022-08-26 → 2022-09-01 (+6d) | 2022-11-21 → 2022-11-25 (+4d) |  | 6d → 5d |
| 140 | Integracija softverske komponente | 2022-08-26 → 2022-09-01 (+6d) | 2022-09-23 → 2022-09-29 (+6d) |  | 6d → 2d |
| 141 | Integracija hardverske komponente | 2022-09-23 → 2022-09-29 (+6d) | 2022-10-21 → 2022-10-27 (+6d) |  | 6d → 2d |
| 142 | M9: Izveštaj uspešnosti integracije | 2022-10-21 → 2022-10-27 (+6d) | 2022-10-21 → 2022-10-27 (+6d) |  | 26d → 22d |
| 143 | Integracija celokupnog sistema | 2022-10-21 → 2022-10-27 (+6d) | 2022-11-21 → 2022-11-25 (+4d) |  | 6d → 2d |
| 144 | M10: Integrisan sistem - funkcionalna celina | 2022-11-21 → 2022-11-25 (+4d) | 2022-11-21 → 2022-11-25 (+4d) |  | none → 110d |
| 145 | **WP7 - Testiranje sistema** | 2022-11-21 → 2022-11-25 (+4d) | 2023-02-22 → 2023-02-23 (+1d) | 65d → 62d | 6d → 5d |
| 146 | **Jedinično testiranje** | 2022-11-21 → 2022-11-25 (+4d) | 2022-12-14 → 2022-12-19 (+5d) | 17d → 16d | 6d → 5d |
| 147 | Planiranje testova | 2022-11-21 → 2022-11-25 (+4d) | 2022-11-24 → 2022-11-29 (+5d) | 3d → 2d | 6d → 5d |
| 148 | Izrada testova | 2022-11-24 → 2022-11-29 (+5d) | 2022-12-05 → 2022-12-08 (+3d) |  | 6d → 5d |
| 149 | Testiranje | 2022-12-05 → 2022-12-08 (+3d) | 2022-12-14 → 2022-12-19 (+5d) |  | 6d → 5d |
| 150 | **Integraciono testiranje** | 2022-12-14 → 2022-12-19 (+5d) | 2023-01-06 → 2023-01-10 (+4d) | 17d → 16d | 6d → 5d |
| 151 | Planiranje testova | 2022-12-14 → 2022-12-19 (+5d) | 2022-12-19 → 2022-12-21 (+2d) | 3d → 2d | 6d → 5d |
| 152 | Izrada testova | 2022-12-19 → 2022-12-21 (+2d) | 2022-12-28 → 2022-12-30 (+2d) |  | 6d → 5d |
| 153 | Testiranje | 2022-12-28 → 2022-12-30 (+2d) | 2023-01-06 → 2023-01-10 (+4d) |  | 6d → 5d |
| 154 | **Sistemsko testiranje** | 2023-01-06 → 2023-01-10 (+4d) | 2023-01-31 → 2023-02-01 (+1d) | 17d → 16d | 6d → 5d |
| 155 | Planiranje testova | 2023-01-06 → 2023-01-10 (+4d) | 2023-01-11 → 2023-01-12 (+1d) | 3d → 2d | 6d → 5d |
| 156 | Izrada testova | 2023-01-11 → 2023-01-12 (+1d) | 2023-01-20 → 2023-01-23 (+3d) |  | 6d → 5d |
| 157 | Testiranje | 2023-01-20 → 2023-01-23 (+3d) | 2023-01-31 → 2023-02-01 (+1d) |  | 6d → 5d |
| 158 | **Performansno testiranje** | 2023-01-31 → 2023-02-01 (+1d) | 2023-02-07 → 2023-02-08 (+1d) |  | 15d → 14d |
| 159 | Testiranje opterećenja - Load testing | 2023-01-31 → 2023-02-01 (+1d) | 2023-02-07 → 2023-02-08 (+1d) |  | 15d → 14d |
| 160 | Stres testiranje - Stress testing | 2023-01-31 → 2023-02-01 (+1d) | 2023-02-07 → 2023-02-08 (+1d) |  | 15d → 14d |
| 161 | Testiranje sigurnosti sistema | 2023-01-31 → 2023-02-01 (+1d) | 2023-02-14 → 2023-02-17 (+3d) |  | 10d → 9d |
| 162 | **Test prihvatanja od strane korisnika** | 2023-01-31 → 2023-02-01 (+1d) | 2023-02-22 → 2023-02-23 (+1d) |  | 6d → 5d |
| 163 | Alfa testiranje | 2023-01-31 → 2023-02-01 (+1d) | 2023-02-09 → 2023-02-10 (+1d) |  | 6d → 5d |
| 164 | Beta testiranje | 2023-02-09 → 2023-02-10 (+1d) | 2023-02-22 → 2023-02-23 (+1d) |  | 6d → 5d |
| 165 | M11: Izveštaj testiranja | 2023-02-22 → 2023-02-23 (+1d) | 2023-02-22 → 2023-02-23 (+1d) |  | 49d → 48d |
| 166 | **WP8 - Дисиминација и експлоатација** | 2023-02-22 → 2023-02-23 (+1d) | 2023-04-26 → 2023-04-27 (+1d) |  | 6d → 5d |
| 167 | Izrada promotivnog materijala | 2023-02-22 → 2023-02-23 (+1d) | 2023-02-27 → 2023-02-28 (+1d) |  | 6d → 5d |
| 168 | Izrada vizuelnog projekta | 2023-02-22 → 2023-02-23 (+1d) | 2023-02-27 → 2023-02-28 (+1d) |  | 6d → 5d |
| 169 | Objavljivanje u medijima i na društvenim mrežama | 2023-02-22 → 2023-02-23 (+1d) | 2023-02-27 → 2023-02-28 (+1d) |  | 6d → 5d |
| 170 | **Organizovanje i učestvovanje na konferencijama** | 2023-02-27 → 2023-02-28 (+1d) | 2023-04-26 → 2023-04-27 (+1d) |  | 6d → 5d |
| 171 | Konferencija u San Francisku | 2023-02-27 → 2023-02-28 (+1d) | 2023-03-13 → 2023-03-14 (+1d) |  | 6d → 5d |
| 172 | Konferencija u Amsterdamu | 2023-03-13 → 2023-03-14 (+1d) | 2023-03-28 → 2023-03-29 (+1d) |  | 6d → 5d |
| 173 | Konferencija u Rimu | 2023-03-28 → 2023-03-29 (+1d) | 2023-04-06 → 2023-04-07 (+1d) |  | 19d → 18d |
| 174 | Konferencija u Londonu | 2023-03-28 → 2023-03-29 (+1d) | 2023-04-11 → 2023-04-12 (+1d) |  | 6d → 5d |
| 175 | Konferencija u Tokiju | 2023-04-11 → 2023-04-12 (+1d) | 2023-04-26 → 2023-04-27 (+1d) |  | 6d → 5d |

## Version 6 (saved 2021-05-31)

Note of the change: Update Projektni_plan.mpp

Last finish stays 2023-05-05.

Changed:

| ID | Task | Start | Finish | Duration | Total float | Predecessors | Other |
| --- | --- | --- | --- | --- | --- | --- | --- |
| 72 | Sastanak sa autorima naučnih radova |  |  |  | 2d → 5d |  | resources none → Intellias Tim 2 Član 1 [50%]; Intellias Tim Lider 2 [50%]; Karolinska Institutet Tim 1 Član 1 [50%]; Karolinska Institutet Tim 1 Član 2 [50%]; Karolinska Institutet Tim 1 Član 3 [50%]; Karolinska Institutet Tim Lider [50%] |
| 73 | Obilazak bolnice |  |  |  | 2d → 5d |  | resources none → Intellias Tim 2 Član 1 [50%]; Intellias Tim Lider 2 [50%]; Karolinska Institutet Tim 1 Član 1 [50%]; Karolinska Institutet Tim 1 Član 2 [50%]; Karolinska Institutet Tim 1 Član 3 [50%]; Karolinska Institutet Tim Lider [50%] |
| 75 | Sastanak sa autorima naučnih radova |  |  |  | 2d → 5d |  | resources none → ETF Tim 2 Član 1 [50%]; ETF Tim Lider 2 [50%]; Intellias Tim Lider 2 [50%]; Karolinska Institutet Tim 1 Član 1 [50%]; Karolinska Institutet Tim 1 Član 2 [50%]; Karolinska Institutet Tim 1 Član 3 [50%]; Karolinska Institutet Tim Lider [50%]; Intellias Tim 2 Član 3 [50%] |
| 76 | Obilazak bolnice |  |  |  | 2d → 5d |  | resources none → ETF Tim 2 Član 1 [50%]; ETF Tim Lider 2 [50%]; Intellias Tim Lider 2 [50%]; Karolinska Institutet Tim 1 Član 1 [50%]; Karolinska Institutet Tim 1 Član 2 [50%]; Karolinska Institutet Tim 1 Član 3 [50%]; Karolinska Institutet Tim Lider [50%]; Intellias Tim 2 Član 3 [50%] |
| 77 | Testiranje dosadašnjih postignuća |  |  |  | 2d → 5d |  | resources none → Karolinska Institutet Tim 1 Član 1; Karolinska Institutet Tim 1 Član 2; Karolinska Institutet Tim Lider |
| 79 | Odabir lokacija za sprovođenje ankete |  |  |  | 18d → 17d |  | resources none → ETF Tim 2 Član 1; Intellias Tim 2 Član 1; Intellias Tim Lider 2 |
| 80 | Formiranje pitanja |  |  |  | 2d → 5d |  | resources none → Karolinska Institutet Tim Lider; Karolinska Institutet Tim 1 Član 1; ETF Tim 2 Član 2; Intellias Tim 2 Član 2 |
| 81 | Prikupljanje odgovora |  |  |  | 2d → 5d |  | resources none → ETF Tim 2 Član 1; Intellias Tim 2 Član 1; Intellias Tim Lider 2 |
| 83 | Unošenje rezultata |  |  |  | 2d → 5d |  | resources none → Karolinska Institutet Tim 1 Član 1; Intellias Tim 1 Član 1 |
| 99 | Identifikovanje komponenti sistema |  |  |  | 2d → 5d |  | resources none → ETF Tim Lider 3; Intellias Tim 1 Član 1; Intellias Tim Lider 1; Karolinska Institutet Tim Lider; Medtronic Tim Lider1 |
| 101 | Dizajn softverskih komponenti |  |  |  | 2d → 5d |  | resources none → ETF Tim 3 Član 1; Intellias Tim 1 Član 1; Intellias Tim Lider 1; Medtronic Tim 1 Član 4 |
| 102 | Dizajn hardverskih komponenti |  |  |  | 2d → 5d |  | resources none → ETF Tim 3 Član 2; Intellias Tim 1 Član 2; Karolinska Institutet Tim 1 Član 2; Intellias Tim 1 Član 3 |
| 104 | Detaljan dizajn softverskih komponenti |  |  |  | 2d → 5d |  | resources none → ETF Tim 3 Član 1; Intellias Tim 1 Član 1; Intellias Tim Lider 1; Medtronic Tim 1 Član 4 |
| 105 | Detaljan dizajn hardverskih komponenti |  |  |  | 2d → 5d |  | resources none → ETF Tim 3 Član 2; Intellias Tim 1 Član 2; Karolinska Institutet Tim 1 Član 2; Intellias Tim 1 Član 3 |
| 106 | Izrada prototipa |  |  |  | 2d → 5d |  | resources none → ETF Tim 1 Član 1; Intellias Tim 1 Član 1; Intellias Tim 1 Član 2; Intellias Tim Lider 1; Karolinska Institutet Tim 1 Član 1; Medtronic Tim 1 Član 1 |
| 109 | Odlazak u Dablin - tim bilding |  |  |  |  |  | resources Dnevnica i noćenje u Dablinu (10 dana) [0.1%]; Povratna avionska karta (Beograd - Dablin) [0.1%]; Povratna avionska karta (Cirih - Dablin) [0.1%] → Dnevnica i noćenje u Dablinu (10 dana) [0.1%]; Povratna avionska karta (Beograd - Dablin) [0.1%]; Povratna avionska karta (Cirih - Dablin) [0.1%]; ETF Tim 1 Član 1; ETF Tim 1 Član 2; ETF Tim 1 Član 3; ETF Tim 1 Član 4; ETF Tim 1 Član 5; ETF Tim Lider 1; ETH Tim 1 Član 3; ETH Tim 1 Član 4; ETH Tim Lider 1 |
| 110 | Razvoj senzora |  |  |  |  |  | resources none → ETF Tim 1 Član 1 [80%]; Medtronic Tim 1 Član 1 [80%]; Medtronic Tim Lider1 [80%] |
| 111 | Razvoj procesora |  |  |  |  |  | resources none → ETF Tim 1 Član 5; Medtronic Tim 2 Član 1; Medtronic Tim 2 Član 2; Medtronic Tim 2 Član 3; Medtronic Tim Lider 2 |
| 112 | Razvoj jedinice za napajanje |  |  |  |  |  | resources none → ETF Tim 1 Član 1 [80%]; Medtronic Tim 1 Član 1 [80%]; Medtronic Tim Lider1 [80%] |
| 113 | Razvoj dodatnih hardverskih jedinica |  |  |  |  |  | resources none → ETF Tim 1 Član 5; Medtronic Tim 2 Član 1; Medtronic Tim 2 Član 2; Medtronic Tim Lider 2 |
| 115 | Testiranje funkcionalnosti |  |  |  |  |  | resources none → ETF Tim 1 Član 1 [70%]; Medtronic Tim 1 Član 1 [70%]; Medtronic Tim Lider1 [70%]; Medtronic Tim 1 Član 2 [70%] |
| 116 | Identifikovanje potencijalnih nedostataka |  |  |  |  |  | resources none → ETF Tim 1 Član 1 [70%]; ETF Tim 1 Član 2 [70%]; Medtronic Tim 1 Član 1 [70%]; Medtronic Tim Lider1 [70%]; ETH Tim 1 Član 2 [70%] |
| 117 | Ispitivanje verovatnoće kvara |  |  |  |  |  | resources none → ETF Tim 1 Član 5; Medtronic Tim 2 Član 1 [50%]; Medtronic Tim 2 Član 2 [50%] |
| 118 | Ispitivanje životnog veka uređaja |  |  |  |  |  | resources none → ETF Tim 1 Član 4; Medtronic Tim 2 Član 3 [50%]; Medtronic Tim 2 Član 4 [50%] |
| 121 | Odlazak u Cirih - tim bilding |  |  |  | 185d → 5d |  | resources Dnevnica i noćenje u Cirihu (10 dana) [0.1%]; Povratna avionska karta (Beograd - Cirih) [0.1%]; Povratna avionska karta (Lviv - Cirih) [0.1%] → Dnevnica i noćenje u Cirihu (10 dana) [0.1%]; Povratna avionska karta (Beograd - Cirih) [0.1%]; Povratna avionska karta (Lviv - Cirih) [0.1%]; ETF Tim 2 Član 1; ETF Tim 2 Član 2; ETF Tim 2 Član 3; ETF Tim 2 Član 4; ETF Tim 2 Član 5; ETF Tim Lider 2; Intellias Tim 1 Član 1; Intellias Tim 1 Član 2; Intellias Tim Lider 1 |
| 122 | **Upravljanje nabavkama** | 2021-12-02 → 2021-12-16 (+14d) | 2021-12-22 → 2021-12-29 (+7d) | 14d → 9d |  |  |  |
| 123 | Raspisivanje nabavke | 2021-12-02 → 2021-12-16 (+14d) | 2021-12-09 → 2021-12-21 (+12d) | 5d → 3d |  | none → 121 | resources none → ETF Tim Lider 2 [50%]; ETH Tim Lider 1 [50%]; Intellias Tim Lider 1 [50%] |
| 124 | Evaluacija nabavke | 2021-12-09 → 2021-12-21 (+12d) | 2021-12-14 → 2021-12-23 (+9d) | 3d → 2d |  |  | resources none → ETF Tim Lider 2 [50%]; ETH Tim Lider 1 [50%]; Intellias Tim Lider 1 [50%] |
| 125 | Izbor dobavljača | 2021-12-14 → 2021-12-23 (+9d) | 2021-12-17 → 2021-12-27 (+10d) | 3d → 2d |  |  | resources none → ETF Tim Lider 2 [50%]; ETH Tim Lider 1 [50%]; Intellias Tim Lider 1 [50%] |
| 126 | Ugovaranje sa dobavljačem | 2021-12-17 → 2021-12-27 (+10d) | 2021-12-22 → 2021-12-29 (+7d) | 3d → 2d |  |  | resources none → ETH Tim Lider 1; Intellias Tim Lider 1; ETF Tim Lider 2 |
| 127 | Osposobljavanje servera | 2021-12-22 → 2021-12-29 (+7d) | 2022-01-18 → 2022-01-25 (+7d) |  |  |  | resources none → ETF Tim 2 Član 4; ETF Tim Lider 2; ETH Tim Lider 1; Intellias Tim 1 Član 3 |
| 128 | Realizacija baze podataka | 2022-01-18 → 2022-01-25 (+7d) | 2022-02-17 → 2022-02-24 (+7d) |  |  |  | resources none → ETF Tim 2 Član 1 [80%]; ETF Tim 2 Član 2 [80%]; ETF Tim Lider 2 [80%]; ETH Tim 1 Član 1 [80%]; ETH Tim Lider 1 [80%]; Intellias Tim 2 Član 1 [80%]; Intellias Tim Lider 2 [80%] |
| 129 | **Obučavanje neuralne mreže** | 2022-02-17 → 2022-02-24 (+7d) |  | 74d → 69d |  |  |  |
| 130 | Priprema podataka, čišćenje i otklanjanje grešaka | 2022-02-17 → 2022-02-24 (+7d) |  | 12d → 7d |  |  | resources none → ETF Tim 2 Član 1; ETF Tim 2 Član 2; ETH Tim 1 Član 4; Intellias Tim 2 Član 3 |
| 131 | Vizuelizacija podataka i analiza |  |  |  |  |  | resources none → ETF Tim 2 Član 1; ETF Tim Lider 2; ETH Tim 1 Član 1; ETH Tim Lider 1; Intellias Tim 1 Član 1; Intellias Tim Lider 1 |
| 132 | Treniranje modela - podešavanje hiperparametara |  |  |  |  |  | resources none → ETF Tim 2 Član 4 [70%]; ETF Tim 2 Član 5 [70%]; ETF Tim Lider 2 [70%]; ETH Tim 1 Član 4 [70%]; ETH Tim Lider 1 [70%]; Intellias Tim 2 Član 1 [70%]; Intellias Tim Lider 2 [70%] |
| 133 | Testiranje modela |  |  |  |  |  | resources none → ETF Tim 2 Član 1; ETH Tim 1 Član 4; ETH Tim Lider 1; Intellias Tim Lider 2 |
| 134 | Realizacija aplikacije |  |  |  |  |  | resources none → ETF Tim 2 Član 3; ETF Tim 2 Član 4; ETF Tim Lider 2; ETH Tim 1 Član 3 |
| 136 | Testiranje funkcionalnosti |  |  |  |  |  | resources none → ETF Tim 2 Član 1; ETF Tim 2 Član 2; ETH Tim 1 Član 1 |
| 137 | Pronalaženje nedostataka i njihovo otklanjanje |  |  |  |  |  | resources none → ETF Tim 2 Član 1; ETF Tim 2 Član 2; ETH Tim 1 Član 1 |
| 140 | Integracija softverske komponente |  |  |  | 2d → 5d |  | resources none → Zenith Tim 1 Član 1; Zenith Tim 1 Član 2; Zenith Tim 1 Član 3; Zenith Tim Lider 1; Zenith Tim 2 Član 1; Zenith Tim 2 Član 2 |
| 141 | Integracija hardverske komponente |  |  |  | 2d → 5d |  | resources none → Zenith Tim 2 Član 1; Zenith Tim 2 Član 2; Zenith Tim 2 Član 3; Zenith Tim Lider 2; Zenith Tim 1 Član 1; Zenith Tim 1 Član 2 |
| 143 | Integracija celokupnog sistema |  |  |  | 2d → 5d |  | resources none → ETF Tim 2 Član 1; Zenith Tim 1 Član 1; Zenith Tim 1 Član 2; Zenith Tim 2 Član 1; Zenith Tim 2 Član 2; Zenith Tim Lider 1; Zenith Tim Lider 2 |
| 147 | Planiranje testova |  |  |  |  |  | resources none → AppQuality Tim 1 Član 1; AppQuality Tim 1 Član 2; AppQuality Tim 1 Član 3; AppQuality Tim Lider 1 |
| 148 | Izrada testova |  |  |  |  |  | resources none → AppQuality Tim 1 Član 1; AppQuality Tim 1 Član 2; AppQuality Tim 1 Član 3; AppQuality Tim Lider 1 |
| 149 | Testiranje |  |  |  |  |  | resources none → AppQuality Tim 1 Član 1; AppQuality Tim 1 Član 2; AppQuality Tim 1 Član 3; AppQuality Tim 1 Član 4; AppQuality Tim 1 Član 5; AppQuality Tim Lider 1; ETF Tim 3 Član 4; ETF Tim 3 Član 5; ETF Tim Lider 3 |
| 151 | Planiranje testova |  |  |  |  |  | resources none → AppQuality Tim 1 Član 1; AppQuality Tim 1 Član 2; AppQuality Tim 1 Član 3; AppQuality Tim Lider 1 |
| 152 | Izrada testova |  |  |  |  |  | resources none → AppQuality Tim 1 Član 1; AppQuality Tim 1 Član 2; AppQuality Tim 1 Član 3; AppQuality Tim Lider 1 |
| 153 | Testiranje |  |  |  |  |  | resources none → AppQuality Tim 1 Član 1; AppQuality Tim 1 Član 2; AppQuality Tim 1 Član 3; AppQuality Tim 1 Član 4; AppQuality Tim 1 Član 5; AppQuality Tim Lider 1; ETF Tim 3 Član 4; ETF Tim 3 Član 5; ETF Tim Lider 3 |
| 155 | Planiranje testova |  |  |  |  |  | resources none → AppQuality Tim 1 Član 1; AppQuality Tim 1 Član 2; AppQuality Tim 1 Član 3; AppQuality Tim Lider 1 |
| 156 | Izrada testova |  |  |  |  |  | resources none → AppQuality Tim 1 Član 1; AppQuality Tim 1 Član 2; AppQuality Tim 1 Član 3; AppQuality Tim Lider 1 |
| 157 | Testiranje |  |  |  |  |  | resources none → AppQuality Tim 1 Član 1; AppQuality Tim 1 Član 2; AppQuality Tim 1 Član 3; AppQuality Tim 1 Član 4; AppQuality Tim 1 Član 5; AppQuality Tim Lider 1; ETF Tim 3 Član 4; ETF Tim 3 Član 5; ETF Tim Lider 3 |
| 159 | Testiranje opterećenja - Load testing |  |  |  |  |  | resources none → ETF Tim 3 Član 1 [50%]; AppQuality Tim 1 Član 1 [50%]; AppQuality Tim 1 Član 2 [50%]; ETF Tim 3 Član 2 [50%] |
| 160 | Stres testiranje - Stress testing |  |  |  |  |  | resources none → ETF Tim 3 Član 1 [50%]; AppQuality Tim 1 Član 1 [50%]; AppQuality Tim 1 Član 2 [50%]; ETF Tim 3 Član 2 [50%] |
| 161 | Testiranje sigurnosti sistema |  |  |  |  |  | resources none → AppQuality Tim 1 Član 3; AppQuality Tim 1 Član 4; AppQuality Tim Lider 1; ETF Tim 3 Član 5 |
| 163 | Alfa testiranje |  |  |  |  |  | resources none → AppQuality Tim 1 Član 5; AppQuality Tim 1 Član 6; ETF Tim 3 Član 3 |
| 164 | Beta testiranje |  |  |  |  |  | resources none → AppQuality Tim 1 Član 5; AppQuality Tim 1 Član 6; ETF Tim 3 Član 3; AppQuality Tim 1 Član 1; AppQuality Tim 1 Član 2 |
| 167 | Izrada promotivnog materijala |  |  |  |  |  | resources none → ETF Tim 3 Član 1 [50%]; ETF Tim 3 Član 2 [50%] |
| 168 | Izrada vizuelnog projekta |  |  |  |  |  | resources none → ETF Tim 3 Član 3; ETF Tim Lider 3 [80%]; ETF Tim 3 Član 4 |
| 169 | Objavljivanje u medijima i na društvenim mrežama |  |  |  |  |  | resources none → ETF Tim 3 Član 5; ETF Tim Lider 3 [20%] |
| 171 | Konferencija u San Francisku |  |  |  |  |  | resources Dnevnica i noćenje u San Francisku (10 dana) [0.1%]; Povratna avionska karta (Beograd - San Francisko) [0.1%]; Povratna avionska karta (Cirih - San Francisko) [0.1%]; Povratna avionska karta (Dablin - San Francisko) [0.1%] → Dnevnica i noćenje u San Francisku (10 dana) [0.1%]; Povratna avionska karta (Beograd - San Francisko) [0.1%]; Povratna avionska karta (Cirih - San Francisko) [0.1%]; Povratna avionska karta (Dablin - San Francisko) [0.1%]; ETF Tim 3 Član 1; ETF Tim 3 Član 2; ETF Tim 3 Član 3; ETF Tim 3 Član 4; ETF Tim 3 Član 5; ETF Tim Lider 3; ETH Tim 1 Član 1; ETH Tim 1 Član 2; ETH Tim Lider 1; Medtronic Tim 2 Član 1; Medtronic Tim 2 Član 2; Medtronic Tim Lider 2 |
| 172 | Konferencija u Amsterdamu |  |  |  |  |  | resources Dnevnica i noćenje u Amsterdamu (10 dana) [0.1%]; Povratna avionska karta (Beograd - Amsterdam) [0.1%]; Povratna avionska karta (Cirih - Amsterdam) [0.1%] → Dnevnica i noćenje u Amsterdamu (10 dana) [0.1%]; Povratna avionska karta (Beograd - Amsterdam) [0.1%]; Povratna avionska karta (Cirih - Amsterdam) [0.1%]; ETF Tim 3 Član 1; ETF Tim Lider 3; ETH Tim 1 Član 1; ETH Tim Lider 1 |
| 173 | Konferencija u Rimu |  |  |  |  |  | resources Dnevnica i noćenje u Rimu (7 dana) [0.1%]; Povratna avionska karta (Beograd - Rim) [0.1%]; Povratna avionska karta (Dablin - Rim) [0.1%] → Dnevnica i noćenje u Rimu (7 dana) [0.1%]; Povratna avionska karta (Beograd - Rim) [0.1%]; Povratna avionska karta (Dablin - Rim) [0.1%]; ETF Tim 3 Član 1; ETF Tim Lider 3; Medtronic Tim 2 Član 1; Medtronic Tim Lider 2 |
| 174 | Konferencija u Londonu |  |  |  |  |  | resources Dnevnica i noćenje u Londonu (10 dana) [0.1%]; Povratna avionska karta (Beograd - London) [0.1%]; Povratna avionska karta (Cirih - London) [0.1%] → Dnevnica i noćenje u Londonu (10 dana) [0.1%]; Povratna avionska karta (Beograd - London) [0.1%]; Povratna avionska karta (Cirih - London) [0.1%]; ETF Tim 3 Član 2; ETF Tim 3 Član 3; ETF Tim 3 Član 4; ETF Tim 3 Član 5; ETH Tim 1 Član 1; ETH Tim Lider 1 |
| 175 | Konferencija u Tokiju |  |  |  |  |  | resources Dnevnica i noćenje u Tokiju (10 dana) [0.1%]; Povratna avionska karta (Beograd - Tokio) [0.1%]; Povratna avionska karta (Cirih - Tokio) [0.1%]; Povratna avionska karta (Dablin - Tokio) [0.1%] → Dnevnica i noćenje u Tokiju (10 dana) [0.1%]; Povratna avionska karta (Beograd - Tokio) [0.1%]; Povratna avionska karta (Cirih - Tokio) [0.1%]; Povratna avionska karta (Dablin - Tokio) [0.1%]; ETF Tim 3 Član 1; ETF Tim 3 Član 2; ETF Tim 3 Član 3; ETF Tim 3 Član 4; ETF Tim 3 Član 5; ETF Tim Lider 3; ETH Tim 1 Član 1; ETH Tim Lider 1; Medtronic Tim 2 Član 1; Medtronic Tim Lider 2 |

## Version 7 (saved 2021-05-31)

Note of the change: Project_final

Last finish stays 2023-05-05.

Changed:

| ID | Task | Start | Finish | Total float | Predecessors | Other |
| --- | --- | --- | --- | --- | --- | --- |
| 3 | Dogovor u vezi datuma sastanka sa svim predstavnicima participanata |  |  |  |  | resources none → ETF Vođa projekta; ETF Zamenik vođe projekta; AppQuality Tim Lider 1; Intellias Tim Lider 1; Medtronic Tim Lider1; Karolinska Institutet Tim Lider [50%] |
| 4 | Ugovaranje smeštaja i prevoza za participante |  |  |  |  | resources none → ETF Tim 1 Član 1; ETF Tim 1 Član 2; ETF Tim 1 Član 3 |
| 5 | Zakup prostora i početak pripreme plana sastanka |  |  |  |  | resources none → ETF Tim 1 Član 1; ETF Tim 1 Član 2; ETF Tim 1 Član 3 |
| 6 | Razvoj plana sastanka |  |  |  |  | resources none → ETF Tim 1 Član 1 [75%]; ETF Tim 1 Član 2 [75%]; ETF Tim 1 Član 3 [75%]; ETF Tim Lider 1 [75%] |
| 7 | Završetak organizacije sastanka |  |  |  |  | resources none → ETF Vođa projekta; ETF Zamenik vođe projekta; AppQuality Tim Lider 1; Intellias Tim Lider 1; Medtronic Tim Lider1; Karolinska Institutet Tim Lider [50%] |
| 9 | Upoznavanje članova i pregled ciljeva projekta |  |  |  |  | resources none → AppQuality Tim 1 Član 1; AppQuality Tim Lider 1; ETF Tim 1 Član 1; ETF Tim Lider 1; ETH Tim 1 Član 1; ETH Tim Lider 1; Intellias Tim 1 Član 1; Intellias Tim Lider 1; Medtronic Tim 1 Član 1; Medtronic Tim Lider1; Zenith Tim 1 Član 1; Zenith Tim Lider 1; Karolinska Institutet Tim Lider; Karolinska Institutet Tim 1 Član 4 |
| 10 | Pregled budzeta |  |  |  |  | resources none → AppQuality Tim 1 Član 1; AppQuality Tim Lider 1; ETF Tim 1 Član 1; ETF Tim Lider 1; ETH Tim 1 Član 1; ETH Tim Lider 1; Intellias Tim 1 Član 1; Intellias Tim Lider 1; Medtronic Tim 1 Član 1; Medtronic Tim Lider1; Zenith Tim 1 Član 1; Zenith Tim Lider 1; Karolinska I... |
| 11 | Podela posla i definisanje rokova |  |  |  |  | resources none → AppQuality Tim 1 Član 1; AppQuality Tim Lider 1; ETF Tim 1 Član 1; ETF Tim Lider 1; ETH Tim 1 Član 1; ETH Tim Lider 1; Intellias Tim 1 Član 1; Intellias Tim Lider 1; Medtronic Tim 1 Član 1; Medtronic Tim Lider1; Zenith Tim 1 Član 1; Zenith Tim Lider 1; Karolinska Institutet Tim Lider; Karolinska Institutet Tim 1 Član 4 |
| 13 | Formiranje timova |  |  | 2d → 8d |  | resources none → ETF Zamenik vođe projekta [25%]; AppQuality Tim Lider 1 [25%]; Intellias Tim Lider 1 [25%]; Medtronic Tim Lider1 [25%]; Karolinska Institutet Tim Lider [25%]; ETF Tim Lider 1 [25%]; ETF Vođa projekta [25%]; ETH Tim Lider 1 [25%]; Zenith Tim Lider 1 [25%] |
| 14 | Međusobno upoznavanje |  |  | 2d → 8d |  | resources none → ETF Zamenik vođe projekta [25%]; AppQuality Tim Lider 1 [25%]; Intellias Tim Lider 1 [25%]; Medtronic Tim Lider1 [25%]; Karolinska Institutet Tim Lider [25%]; ETF Tim Lider 1 [25%]; ETF Vođa projekta [25%]; ETH Tim Lider 1 [25%]; Zenith Tim Lider 1 [25%] |
| 15 | Predstavljanje rasporeda dnevnih, nedeljnih i mesečnih sastanaka |  |  | 2d → 8d |  | resources none → ETF Zamenik vođe projekta [25%]; AppQuality Tim Lider 1 [25%]; Intellias Tim Lider 1 [25%]; Medtronic Tim Lider1 [25%]; Karolinska Institutet Tim Lider [25%]; ETF Tim Lider 1 [25%]; ETF Vođa projekta [25%]; ETH Tim Lider 1 [25%]; Zenith Tim Lider 1 [25%] |
| 16 | Pojedinačno predstavljanje |  |  |  |  | resources none → ETF Zamenik vođe projekta [25%]; AppQuality Tim Lider 1 [25%]; Intellias Tim Lider 1 [25%]; Medtronic Tim Lider1 [25%]; Karolinska Institutet Tim Lider [25%]; ETF Tim Lider 1 [25%]; ETF Vođa projekta [25%]; ETH Tim Lider 1 [25%]; Zenith Tim Lider 1 [25%] |
| 17 | Objašnjavanje strukture projekta članovima |  |  |  |  | resources none → ETF Zamenik vođe projekta [25%]; AppQuality Tim Lider 1 [25%]; Intellias Tim Lider 1 [25%]; Medtronic Tim Lider1 [25%]; Karolinska Institutet Tim Lider [25%]; ETF Tim Lider 1 [25%]; ETF Vođa projekta [25%]; ETH Tim Lider 1 [25%]; Zenith Tim Lider 1 [25%] |
| 18 | Uspostavljanje pravila tima |  |  |  |  | resources none → ETF Zamenik vođe projekta [25%]; AppQuality Tim Lider 1 [25%]; Intellias Tim Lider 1 [25%]; Medtronic Tim Lider1 [25%]; Karolinska Institutet Tim Lider [25%]; ETF Tim Lider 1 [25%]; ETF Vođa projekta [25%]; ETH Tim Lider 1 [25%]; Zenith Tim Lider 1 [25%] |
| 19 | Uspostavljanje dnevne rutine |  |  |  |  | resources none → ETF Zamenik vođe projekta [25%]; AppQuality Tim Lider 1 [25%]; Intellias Tim Lider 1 [25%]; Medtronic Tim Lider1 [25%]; Karolinska Institutet Tim Lider [25%]; ETF Tim Lider 1 [25%]; ETF Vođa projekta [25%]; ETH Tim Lider 1 [25%]; Zenith Tim Lider 1 [25%] |
| 20 | Uspostavljanje načina komunikacije |  |  |  |  | resources none → ETF Zamenik vođe projekta [25%]; AppQuality Tim Lider 1 [25%]; Intellias Tim Lider 1 [25%]; Medtronic Tim Lider1 [25%]; Karolinska Institutet Tim Lider [25%]; ETF Tim Lider 1 [25%]; ETF Vođa projekta [25%]; ETH Tim Lider 1 [25%]; Zenith Tim Lider 1 [25%] |
| 22 | Podela odgovornosti i pisanje RASCI matrice |  |  |  |  | resources none → ETF Tim Lider 1 [50%]; ETF Tim 1 Član 4 [50%] |
| 23 | Definisanje parametara za praćenje napretka projekta |  |  |  |  | resources none → ETF Tim Lider 1 [50%]; ETF Tim 1 Član 4 [50%] |
| 24 | Pisanje neophodnih dokumenata |  |  |  |  | resources none → ETF Tim Lider 1 [50%]; ETF Tim 1 Član 4 [50%] |
| 25 | Pisanje PBS i RBS |  |  |  |  | resources none → ETF Tim Lider 1 [50%]; ETF Tim 1 Član 4 [50%] |
| 26 | Definisanje merljivosti i definicije završenog |  |  |  |  | resources none → ETF Tim 1 Član 5 [50%]; ETF Tim Lider 1 [50%] |
| 28 | Planiranje kvaliteta |  |  |  |  | resources none → ETF Tim Lider 1 [50%]; ETF Tim Lider 2 [50%] |
| 29 | Postavljanje standarda kvaliteta |  |  |  |  | resources none → ETF Tim Lider 1 [50%]; ETF Tim Lider 2 [50%] |
| 31 | Detaljna analiza do sada pronaćenih rizika |  |  |  |  | resources none → ETF Tim Lider 1 [33%]; ETF Tim Lider 2 [33%]; ETF Tim Lider 3 [33%] |
| 32 | Formiranje metoda za ublažavanje ili eliminisanje rizika |  |  |  |  | resources none → ETF Tim Lider 1 [33%]; ETF Tim Lider 2 [33%]; ETF Tim Lider 3 [33%] |
| 33 | Upozoravanje članova tima sa predviđenim rizicima |  |  |  |  | resources none → ETF Tim Lider 1 [33%]; ETF Tim Lider 2 [33%]; ETF Tim Lider 3 [33%] |
| 35 | Praćenje napretka projekta |  |  |  |  | resources none → ETF Vođa projekta [7%]; ETF Zamenik vođe projekta [3%] |
| 36 | Održavanje redovnih sastanaka |  |  |  |  | resources none → ETF Vođa projekta [7%]; ETF Zamenik vođe projekta [3%] |
| 37 | Upravljanje kvalitetom |  |  |  |  | resources none → ETF Vođa projekta [7%]; ETF Zamenik vođe projekta [3%] |
| 38 | Rešavanje nepredviđenih situacija |  |  |  |  | resources none → ETF Vođa projekta [7%]; ETF Zamenik vođe projekta [3%] |
| 39 | Upravljanje javnim nabavkama |  |  |  |  | resources none → ETF Vođa projekta [7%]; ETF Zamenik vođe projekta [3%] |
| 40 | Praćenje rashoda |  |  |  |  | resources none → ETF Vođa projekta [7%]; ETF Zamenik vođe projekta [3%] |
| 41 | Kontrola rezultata radnih paketa |  |  |  |  | resources none → ETF Vođa projekta [7%]; ETF Zamenik vođe projekta [3%] |
| 42 | Održavanje liste problema |  |  |  |  | resources none → ETF Vođa projekta [7%]; ETF Zamenik vođe projekta [3%] |
| 43 | Praćenje rizika |  |  |  |  | resources none → ETF Vođa projekta [7%]; ETF Zamenik vođe projekta [3%] |
| 44 | Obrada feedbacka od radnika |  |  |  |  | resources none → ETF Vođa projekta [7%]; ETF Zamenik vođe projekta [3%] |
| 46 | **Sastanak nakon prvih 6 meseci** |  |  |  |  | resources none → AppQuality Tim Lider 1 [20%]; ETF Tim Lider 1 [20%]; ETF Vođa projekta [30%]; ETF Zamenik vođe projekta [30%]; ETH Tim Lider 1 [20%]; Karolinska Institutet Tim Lider [20%]; Medtronic Tim Lider1 [20%]; Zenith Tim Lider 1 [20%]; Intellias Tim Lider 2 [20%] |
| 48 | **Sastanak nakon drugih 6 meseci** |  |  |  |  | resources none → AppQuality Tim Lider 1 [20%]; ETF Tim Lider 1 [20%]; ETF Vođa projekta [30%]; ETF Zamenik vođe projekta [30%]; ETH Tim Lider 1 [20%]; Karolinska Institutet Tim Lider [20%]; Medtronic Tim Lider1 [20%]; Zenith Tim Lider 1 [20%]; Intellias Tim Lider 2 [20%] |
| 50 | **Sastanak nakon trećih 6 meseci** | 2022-11-05 → 2022-11-07 (+2d) | 2022-11-07 → 2022-11-08 (+1d) |  |  | resources none → AppQuality Tim Lider 1 [20%]; ETF Tim Lider 1 [20%]; ETF Vođa projekta [30%]; ETF Zamenik vođe projekta [30%]; ETH Tim Lider 1 [20%]; Karolinska Institutet Tim Lider [20%]; Medtronic Tim Lider1 [20%]; Intellias Tim Lider 2 [20%]; Zenith Tim Lider 2 [20%] |
| 51 | M3: Izveštaj o napretku na projektu 2.1 | 2022-11-07 → 2022-11-08 (+1d) | 2022-11-07 → 2022-11-08 (+1d) | 123d → 122d |  | constraint start no earlier than 2022-11-07 → start no earlier than 2022-11-08 |
| 52 | **Sastanak nakon poslednjih 6 meseci** |  |  |  |  | resources none → AppQuality Tim Lider 1 [20%]; ETF Tim Lider 1 [20%]; ETF Vođa projekta [30%]; ETF Zamenik vođe projekta [30%]; ETH Tim Lider 1 [20%]; Karolinska Institutet Tim Lider [20%]; Medtronic Tim Lider1 [20%]; Intellias Tim Lider 2 [20%]; Zenith Tim Lider 2 [20%] |
| 54 | **Organizacija Brainstorming-a** |  |  |  |  | was named Organizaija Brainstorming-a |
| 60 | Održavanje Brainstorming-a | 2022-05-04 → 2022-05-09 (+5d) | 2022-05-13 → 2022-05-18 (+5d) | 248d → 245d | 54 → none | constraint none → start no earlier than 2022-05-09; resources Dnevnica i noćenje u Cirihu (7 dana) [0.1%]; Povratna avionska karta (Stokholm - Cirih) [0.1%]; Povratna avionska karta (Beograd - Cirih) [0.1%]; Povratna avionska karta (Dablin - Cirih) [0.1%]; Povratna avionska karta (Lviv - Cirih) [0.1%]; Povratna avionska karta (Milano - Cirih) [0.1%]; Povratna avionska karta (Monkstovn - Cirih) [0.1%] → Dnevnica i noćenje u Cirihu (7 dana) [0.1%]; Povratna avionska karta (Stokholm - Cirih) [0.1%]; Povratna avionska karta (Beograd - Cirih) [0.1%]; Povratna avionska karta (Dablin - Cirih) [0.1%]; Povratna avionska karta (Lviv - Cirih) [0.1%]; Povratna avionska karta (Milano - Cirih) [0.1%]; Povratna avionska karta (Monkstovn - Cirih) [0.1%]; AppQuality Tim 1 Član 5; AppQuality Tim 1 Član 6; AppQuality Tim Lider 1; ETF Tim 1 Član 1; ETF Tim 1 Član 2; ETF Tim Lider 1; Karolinska Institutet Tim 1 Član 1; Karolinska Institutet Tim 1 Član 2; Karolinska Institutet Tim Lider; Zenith Tim 2 Član 1; Zenith Tim 2 Član 2; Medtronic Tim Lider1; Medtronic Tim 1 Član 1; Medtronic Tim 1 Član 2; ETF Tim Lider 3; ETF Tim 3 Član 1; ETF Tim 3 Član 2; Intellias Tim Lider 1; Intellias Tim 1 Član 1; Intellias Tim 1 Član 2 |
| 62 | Dogovor u vezi datuma sastanka sa svim predstavnicima participanata |  |  |  |  | resources none → ETF Vođa projekta [30%]; ETF Zamenik vođe projekta [30%]; AppQuality Tim Lider 1; Intellias Tim Lider 1; Medtronic Tim Lider1; Karolinska Institutet Tim Lider [50%] |
| 63 | Ugovaranje smeštaja i prevoza za participante |  |  |  |  | resources none → ETF Tim 1 Član 1; ETF Tim 1 Član 2; ETF Tim 1 Član 3 |
| 64 | Zakup prostora i početak pripreme plana sastanka |  |  |  |  | resources none → ETF Tim 1 Član 1; ETF Tim 1 Član 2; ETF Tim 1 Član 3 |
| 65 | Razvoj plana sastanka |  |  |  |  | resources none → ETF Tim 1 Član 1 [75%]; ETF Tim 1 Član 2 [75%]; ETF Tim 1 Član 3 [75%]; ETF Tim Lider 1 [75%] |
| 66 | Završetak organizacije sastanka |  |  |  |  | resources none → ETF Vođa projekta [30%]; ETF Zamenik vođe projekta [30%]; AppQuality Tim Lider 1; Intellias Tim Lider 1; Medtronic Tim Lider1; Karolinska Institutet Tim Lider [50%] |
| 72 | Sastanak sa autorima naučnih radova |  |  |  |  | resources Intellias Tim 2 Član 1 [50%]; Intellias Tim Lider 2 [50%]; Karolinska Institutet Tim 1 Član 1 [50%]; Karolinska Institutet Tim 1 Član 2 [50%]; Karolinska Institutet Tim 1 Član 3 [50%]; Karolinska Institutet Tim Lider [50%] → Intellias Tim 2 Član 1 [50%]; Intellias Tim Lider 2 [50%]; Karolinska Institutet Tim 1 Član 1 [50%]; Karolinska Institutet Tim 1 Član 2 [50%]; Karolinska Institutet Tim 1 Član 3 [50%]; Karolinska Institutet Tim 1 Član 5 [50%] |
| 73 | Obilazak bolnice |  |  |  |  | resources Intellias Tim 2 Član 1 [50%]; Intellias Tim Lider 2 [50%]; Karolinska Institutet Tim 1 Član 1 [50%]; Karolinska Institutet Tim 1 Član 2 [50%]; Karolinska Institutet Tim 1 Član 3 [50%]; Karolinska Institutet Tim Lider [50%] → Intellias Tim 2 Član 1 [50%]; Intellias Tim Lider 2 [50%]; Karolinska Institutet Tim 1 Član 1 [50%]; Karolinska Institutet Tim 1 Član 2 [50%]; Karolinska Institutet Tim 1 Član 3 [50%]; Karolinska Institutet Tim 1 Član 5 [50%] |
| 75 | Sastanak sa autorima naučnih radova |  |  |  |  | resources ETF Tim 2 Član 1 [50%]; ETF Tim Lider 2 [50%]; Intellias Tim Lider 2 [50%]; Karolinska Institutet Tim 1 Član 1 [50%]; Karolinska Institutet Tim 1 Član 2 [50%]; Karolinska Institutet Tim 1 Član 3 [50%]; Karolinska Institutet Tim Lider [50%]; Intellias Tim 2 Član 3 [50%] → ETF Tim 2 Član 1 [50%]; ETF Tim Lider 2 [50%]; Intellias Tim Lider 2 [50%]; Karolinska Institutet Tim 1 Član 1 [50%]; Karolinska Institutet Tim 1 Član 2 [50%]; Karolinska Institutet Tim 1 Član 3 [50%]; Intellias Tim 2 Član 3 [50%]; Karolinska Institutet Tim 1 Član 5 [50%] |
| 76 | Obilazak bolnice |  |  |  |  | resources ETF Tim 2 Član 1 [50%]; ETF Tim Lider 2 [50%]; Intellias Tim Lider 2 [50%]; Karolinska Institutet Tim 1 Član 1 [50%]; Karolinska Institutet Tim 1 Član 2 [50%]; Karolinska Institutet Tim 1 Član 3 [50%]; Karolinska Institutet Tim Lider [50%]; Intellias Tim 2 Član 3 [50%] → ETF Tim 2 Član 1 [50%]; ETF Tim Lider 2 [50%]; Intellias Tim Lider 2 [50%]; Karolinska Institutet Tim 1 Član 1 [50%]; Karolinska Institutet Tim 1 Član 2 [50%]; Karolinska Institutet Tim 1 Član 3 [50%]; Intellias Tim 2 Član 3 [50%]; Karolinska Institutet Tim 1 Član 5 [50%] |
| 77 | Testiranje dosadašnjih postignuća |  |  |  |  | resources Karolinska Institutet Tim 1 Član 1; Karolinska Institutet Tim 1 Član 2; Karolinska Institutet Tim Lider → Karolinska Institutet Tim 1 Član 1; Karolinska Institutet Tim 1 Član 2; Karolinska Institutet Tim 1 Član 3 |
| 83 | Unošenje rezultata |  |  |  |  | resources Karolinska Institutet Tim 1 Član 1; Intellias Tim 1 Član 1 → Karolinska Institutet Tim 1 Član 1; Intellias Tim 2 Član 1; Intellias Tim 2 Član 2; Karolinska Institutet Tim 1 Član 2 |
| 84 | Generisanje grafikona odgovora |  |  |  |  | resources none → Karolinska Institutet Tim 1 Član 1; Karolinska Institutet Tim 1 Član 2; Karolinska Institutet Tim Lider |
| 85 | Analiza grafikona |  |  |  |  | resources none → Karolinska Institutet Tim 1 Član 1; Karolinska Institutet Tim 1 Član 2; Karolinska Institutet Tim 1 Član 3; Karolinska Institutet Tim Lider |
| 87 | Definisanje glavnih korisničkih funkcionalnosti |  |  |  |  | resources none → Karolinska Institutet Tim 1 Član 1; ETF Tim 1 Član 1; Intellias Tim 2 Član 1; Intellias Tim 2 Član 2 |
| 88 | Konsultacije sa lekarima |  |  |  |  | resources none → Karolinska Institutet Tim 1 Član 2; Karolinska Institutet Tim 1 Član 3 |
| 89 | Definisanje dodatnih funkcionalnosti |  |  |  |  | resources none → Karolinska Institutet Tim Lider; Karolinska Institutet Tim 1 Član 1; Intellias Tim 2 Član 1; ETF Tim 1 Član 1 |
| 91 | Definisanje glavnih korisničkih funkcionalnosti |  |  |  |  | resources none → Karolinska Institutet Tim 1 Član 1; ETF Tim 1 Član 1; Intellias Tim 2 Član 1; Intellias Tim 2 Član 2 |
| 92 | Konsultacije sa lekarima |  |  |  |  | resources none → Karolinska Institutet Tim 1 Član 2; Karolinska Institutet Tim 1 Član 3 |
| 93 | Definisanje dodatnih funkcionalnosti |  |  |  |  | resources none → Karolinska Institutet Tim Lider; Karolinska Institutet Tim 1 Član 1; Intellias Tim 2 Član 1; ETF Tim 1 Član 1 |
| 95 | Analiza potrebnog tima |  |  |  |  | resources none → Karolinska Institutet Tim Lider; Karolinska Institutet Tim 1 Član 1; ETF Tim 1 Član 1; Intellias Tim 2 Član 1 |
| 96 | Analiza dinamike postojećih timova |  |  |  |  | resources none → ETF Vođa projekta [30%]; ETF Zamenik vođe projekta [30%]; Intellias Tim Lider 2 |
| 97 | Odabir konkretnog modela |  |  |  |  | resources none → ETF Vođa projekta [30%]; ETF Zamenik vođe projekta [30%]; Karolinska Institutet Tim Lider; Intellias Tim Lider 2 |
| 143 | Integracija celokupnog sistema |  |  |  |  | resources ETF Tim 2 Član 1; Zenith Tim 1 Član 1; Zenith Tim 1 Član 2; Zenith Tim 2 Član 1; Zenith Tim 2 Član 2; Zenith Tim Lider 1; Zenith Tim Lider 2 → ETF Tim 2 Član 1; Zenith Tim 1 Član 1; Zenith Tim 1 Član 2; Zenith Tim 2 Član 1; Zenith Tim 2 Član 2; Zenith Tim Lider 1 |

## Version 8 (saved 2021-06-01)

Note of the change: Merge branch 'Microsoft_Project_PhaseII' into main

Last finish stays 2023-05-05.

Added:

| ID | Task | Duration | Start | Finish | Predecessors | Constraint | Resources |
| --- | --- | --- | --- | --- | --- | --- | --- |
| 176 | Obilazak zdravstvenih ustanova - promocija projekta | 10d | 2023-03-14 | 2023-03-29 | 167, 168 | start no earlier than 2023-03-14 | ETF Tim 1 Član 1; ETF Tim 1 Član 2; ETF Tim Lider 1; ETH Tim 1 Član 4; ETH Tim 1 Član 3; Medtronic Tim Lider 2; Medtronic Tim 2 Član 1 |

Changed:

| ID | Task | Total float | Other |
| --- | --- | --- | --- |
| 3 | Dogovor u vezi datuma sastanka sa svim predstavnicima participanata |  | resources ETF Vođa projekta; ETF Zamenik vođe projekta; AppQuality Tim Lider 1; Intellias Tim Lider 1; Medtronic Tim Lider1; Karolinska Institutet Tim Lider [50%] → ETF Vođa projekta; ETF Zamenik vođe projekta; AppQuality Tim Lider 1 [50%]; Intellias Tim Lider 1 [50%]; Medtronic Tim Lider1 [50%]; Karolinska Institutet Tim Lider [50%] |
| 10 | Pregled budzeta |  | resources AppQuality Tim 1 Član 1; AppQuality Tim Lider 1; ETF Tim 1 Član 1; ETF Tim Lider 1; ETH Tim 1 Član 1; ETH Tim Lider 1; Intellias Tim 1 Član 1; Intellias Tim Lider 1; Medtronic Tim 1 Član 1; Medtronic Tim Lider1; Zenith Tim 1 Član 1; Zenith Tim Lider 1; Karolinska I... → AppQuality Tim 1 Član 1; AppQuality Tim Lider 1; ETF Tim 1 Član 1; ETF Tim Lider 1; ETH Tim 1 Član 1; ETH Tim Lider 1; Intellias Tim 1 Član 1; Intellias Tim Lider 1; Medtronic Tim 1 Član 1; Medtronic Tim Lider1; Zenith Tim 1 Član 1; Zenith Tim Lider 1 |
| 46 | **Sastanak nakon prvih 6 meseci** |  | resources AppQuality Tim Lider 1 [20%]; ETF Tim Lider 1 [20%]; ETF Vođa projekta [30%]; ETF Zamenik vođe projekta [30%]; ETH Tim Lider 1 [20%]; Karolinska Institutet Tim Lider [20%]; Medtronic Tim Lider1 [20%]; Zenith Tim Lider 1 [20%]; Intellias Tim Lider 2 [20%] → AppQuality Tim Lider 1 [30%]; ETF Tim Lider 1 [30%]; ETF Vođa projekta [30%]; ETF Zamenik vođe projekta [30%]; ETH Tim Lider 1 [30%]; Karolinska Institutet Tim Lider [30%]; Medtronic Tim Lider1 [30%]; Zenith Tim Lider 1 [30%]; Intellias Tim Lider 2 [30%] |
| 48 | **Sastanak nakon drugih 6 meseci** |  | resources AppQuality Tim Lider 1 [20%]; ETF Tim Lider 1 [20%]; ETF Vođa projekta [30%]; ETF Zamenik vođe projekta [30%]; ETH Tim Lider 1 [20%]; Karolinska Institutet Tim Lider [20%]; Medtronic Tim Lider1 [20%]; Zenith Tim Lider 1 [20%]; Intellias Tim Lider 2 [20%] → AppQuality Tim Lider 1 [30%]; ETF Tim Lider 1 [30%]; ETF Vođa projekta [30%]; ETF Zamenik vođe projekta [30%]; ETH Tim Lider 1 [30%]; Karolinska Institutet Tim Lider [30%]; Medtronic Tim Lider1 [30%]; Zenith Tim Lider 1 [30%]; Intellias Tim Lider 2 [30%] |
| 50 | **Sastanak nakon trećih 6 meseci** |  | resources AppQuality Tim Lider 1 [20%]; ETF Tim Lider 1 [20%]; ETF Vođa projekta [30%]; ETF Zamenik vođe projekta [30%]; ETH Tim Lider 1 [20%]; Karolinska Institutet Tim Lider [20%]; Medtronic Tim Lider1 [20%]; Intellias Tim Lider 2 [20%]; Zenith Tim Lider 2 [20%] → AppQuality Tim Lider 1 [30%]; ETF Tim Lider 1 [30%]; ETF Vođa projekta [30%]; ETF Zamenik vođe projekta [30%]; ETH Tim Lider 1 [30%]; Karolinska Institutet Tim Lider [30%]; Medtronic Tim Lider1 [30%]; Intellias Tim Lider 2 [30%]; Zenith Tim Lider 2 [30%] |
| 52 | **Sastanak nakon poslednjih 6 meseci** |  | resources AppQuality Tim Lider 1 [20%]; ETF Tim Lider 1 [20%]; ETF Vođa projekta [30%]; ETF Zamenik vođe projekta [30%]; ETH Tim Lider 1 [20%]; Karolinska Institutet Tim Lider [20%]; Medtronic Tim Lider1 [20%]; Intellias Tim Lider 2 [20%]; Zenith Tim Lider 2 [20%] → AppQuality Tim Lider 1 [30%]; ETF Tim Lider 1 [30%]; ETF Vođa projekta [30%]; ETF Zamenik vođe projekta [30%]; ETH Tim Lider 1 [30%]; Karolinska Institutet Tim Lider [30%]; Medtronic Tim Lider1 [30%]; Intellias Tim Lider 2 [30%]; Zenith Tim Lider 1 [30%] |
| 62 | Dogovor u vezi datuma sastanka sa svim predstavnicima participanata |  | resources ETF Vođa projekta [30%]; ETF Zamenik vođe projekta [30%]; AppQuality Tim Lider 1; Intellias Tim Lider 1; Medtronic Tim Lider1; Karolinska Institutet Tim Lider [50%] → ETF Vođa projekta [30%]; ETF Zamenik vođe projekta [30%]; AppQuality Tim Lider 1 [50%]; Intellias Tim Lider 1 [50%]; Medtronic Tim Lider1 [50%]; Karolinska Institutet Tim Lider [50%] |
| 69 | **WP2 - Analiza korisničkih zahteva** | 5d → 0.88d | constraint none → finish no later than 2021-09-05 |
| 77 | Testiranje dosadašnjih postignuća | 5d → 0.88d | resources Karolinska Institutet Tim 1 Član 1; Karolinska Institutet Tim 1 Član 2; Karolinska Institutet Tim 1 Član 3 → Karolinska Institutet Tim 1 Član 1; Karolinska Institutet Tim 1 Član 2; Karolinska Institutet Tim 1 Član 3; Intellias Tim Lider 2 |
| 81 | Prikupljanje odgovora | 5d → 0.88d | resources ETF Tim 2 Član 1; Intellias Tim 2 Član 1; Intellias Tim Lider 2 → ETF Tim 2 Član 1; Intellias Tim 2 Član 1; Intellias Tim Lider 2; Karolinska Institutet Tim 1 Član 1 |
| 85 | Analiza grafikona | 5d → 0.88d | resources Karolinska Institutet Tim 1 Član 1; Karolinska Institutet Tim 1 Član 2; Karolinska Institutet Tim 1 Član 3; Karolinska Institutet Tim Lider → Karolinska Institutet Tim 1 Član 1; Karolinska Institutet Tim 1 Član 2; Karolinska Institutet Tim Lider; Intellias Tim Lider 1; ETF Tim Lider 2 |
| 87 | Definisanje glavnih korisničkih funkcionalnosti | 5d → 0.88d | resources Karolinska Institutet Tim 1 Član 1; ETF Tim 1 Član 1; Intellias Tim 2 Član 1; Intellias Tim 2 Član 2 → Karolinska Institutet Tim 1 Član 1; ETF Tim 1 Član 1; Intellias Tim 2 Član 1; Intellias Tim 2 Član 2; Karolinska Institutet Tim 1 Član 4 |
| 88 | Konsultacije sa lekarima | 12d → 7.88d | resources Karolinska Institutet Tim 1 Član 2; Karolinska Institutet Tim 1 Član 3 → Karolinska Institutet Tim 1 Član 2; Karolinska Institutet Tim Lider; Intellias Tim 2 Član 3 |
| 89 | Definisanje dodatnih funkcionalnosti | 5d → 0.88d | resources Karolinska Institutet Tim Lider; Karolinska Institutet Tim 1 Član 1; Intellias Tim 2 Član 1; ETF Tim 1 Član 1 → Karolinska Institutet Tim Lider; Karolinska Institutet Tim 1 Član 1; Intellias Tim 2 Član 1; ETF Tim 1 Član 1; Intellias Tim 2 Član 2 |
| 91 | Definisanje glavnih korisničkih funkcionalnosti | 5d → 0.88d | resources Karolinska Institutet Tim 1 Član 1; ETF Tim 1 Član 1; Intellias Tim 2 Član 1; Intellias Tim 2 Član 2 → Karolinska Institutet Tim 1 Član 1; ETF Tim 1 Član 1; Intellias Tim 2 Član 1; Intellias Tim 2 Član 2; Karolinska Institutet Tim Lider |
| 95 | Analiza potrebnog tima | 5d → 0.88d | resources Karolinska Institutet Tim Lider; Karolinska Institutet Tim 1 Član 1; ETF Tim 1 Član 1; Intellias Tim 2 Član 1 → Karolinska Institutet Tim Lider; Karolinska Institutet Tim 1 Član 1; Intellias Tim Lider 1; ETF Tim Lider 1 |
| 96 | Analiza dinamike postojećih timova | 5d → 0.88d | resources ETF Vođa projekta [30%]; ETF Zamenik vođe projekta [30%]; Intellias Tim Lider 2 → ETF Vođa projekta [30%]; ETF Zamenik vođe projekta [30%]; Intellias Tim Lider 2; ETF Tim Lider 2 |
| 98 | **WP3 - Analiza i detalji dizajna sistema** | 5d → 1.88d | constraint none → finish no later than 2021-12-05 |
| 99 | Identifikovanje komponenti sistema | 5d → 1.88d | resources ETF Tim Lider 3; Intellias Tim 1 Član 1; Intellias Tim Lider 1; Karolinska Institutet Tim Lider; Medtronic Tim Lider1 → ETF Tim Lider 3; Intellias Tim 1 Član 1; Intellias Tim Lider 1; Karolinska Institutet Tim Lider; Medtronic Tim Lider1; ETF Tim 3 Član 1 |
| 101 | Dizajn softverskih komponenti | 5d → 1.88d | resources ETF Tim 3 Član 1; Intellias Tim 1 Član 1; Intellias Tim Lider 1; Medtronic Tim 1 Član 4 → ETF Tim 3 Član 1; Intellias Tim 1 Član 1; Intellias Tim Lider 1; Medtronic Tim 1 Član 4; Medtronic Tim 1 Član 2 |
| 102 | Dizajn hardverskih komponenti | 5d → 1.88d | resources ETF Tim 3 Član 2; Intellias Tim 1 Član 2; Karolinska Institutet Tim 1 Član 2; Intellias Tim 1 Član 3 → ETF Tim 3 Član 2; Karolinska Institutet Tim 1 Član 2; Intellias Tim 2 Član 2; Intellias Tim Lider 2; ETF Tim 3 Član 3 |
| 104 | Detaljan dizajn softverskih komponenti | 5d → 1.88d | resources ETF Tim 3 Član 1; Intellias Tim 1 Član 1; Intellias Tim Lider 1; Medtronic Tim 1 Član 4 → ETF Tim 3 Član 1; Intellias Tim 1 Član 1; Intellias Tim Lider 1; Medtronic Tim 1 Član 4; Medtronic Tim 1 Član 2 |
| 105 | Detaljan dizajn hardverskih komponenti | 5d → 1.88d | resources ETF Tim 3 Član 2; Intellias Tim 1 Član 2; Karolinska Institutet Tim 1 Član 2; Intellias Tim 1 Član 3 → ETF Tim 3 Član 2; Karolinska Institutet Tim 1 Član 2; Intellias Tim 2 Član 2; Intellias Tim Lider 2; ETF Tim 3 Član 3 |
| 108 | **WP4 - Razvijanje hardverske komponente (uređaja)** | 181d → 13.88d | constraint none → finish no later than 2022-09-05 |
| 110 | Razvoj senzora | 290d → 122.88d | resources ETF Tim 1 Član 1 [80%]; Medtronic Tim 1 Član 1 [80%]; Medtronic Tim Lider1 [80%] → ETF Tim 1 Član 1 [80%]; Medtronic Tim 1 Član 1; Medtronic Tim Lider1; ETF Tim 1 Član 2 [80%] |
| 111 | Razvoj procesora | 181d → 13.88d | resources ETF Tim 1 Član 5; Medtronic Tim 2 Član 1; Medtronic Tim 2 Član 2; Medtronic Tim 2 Član 3; Medtronic Tim Lider 2 → ETF Tim 1 Član 5; Medtronic Tim 2 Član 1; Medtronic Tim 2 Član 2; Medtronic Tim 2 Član 3; Medtronic Tim Lider 2; ETF Tim Lider 1 |
| 112 | Razvoj jedinice za napajanje | 181d → 13.88d | resources ETF Tim 1 Član 1 [80%]; Medtronic Tim 1 Član 1 [80%]; Medtronic Tim Lider1 [80%] → ETF Tim 1 Član 1 [80%]; Medtronic Tim 1 Član 1; Medtronic Tim Lider1; ETF Tim 1 Član 2 [80%] |
| 113 | Razvoj dodatnih hardverskih jedinica | 181d → 13.88d | resources ETF Tim 1 Član 5; Medtronic Tim 2 Član 1; Medtronic Tim 2 Član 2; Medtronic Tim Lider 2 → ETF Tim 1 Član 5; Medtronic Tim 2 Član 1; Medtronic Tim 2 Član 2; Medtronic Tim Lider 2; ETF Tim 1 Član 4 |
| 115 | Testiranje funkcionalnosti | 181d → 13.88d | resources ETF Tim 1 Član 1 [70%]; Medtronic Tim 1 Član 1 [70%]; Medtronic Tim Lider1 [70%]; Medtronic Tim 1 Član 2 [70%] → ETF Tim 1 Član 1; Medtronic Tim 1 Član 1; Medtronic Tim Lider1; Medtronic Tim 1 Član 2 |
| 116 | Identifikovanje potencijalnih nedostataka | 184d → 16.88d | resources ETF Tim 1 Član 1 [70%]; ETF Tim 1 Član 2 [70%]; Medtronic Tim 1 Član 1 [70%]; Medtronic Tim Lider1 [70%]; ETH Tim 1 Član 2 [70%] → ETF Tim 1 Član 1 [80%]; ETF Tim 1 Član 2 [80%]; Medtronic Tim 1 Član 1 [80%]; Medtronic Tim Lider1 [80%]; ETH Tim 1 Član 2 [80%] |
| 120 | **WP5 - Razvijanje softverske komponente** | 5d → 2.88d | constraint none → finish no later than 2022-09-05 |
| 139 | **WP6 - Integracija sistema** | 5d → 5.88d | constraint none → finish no later than 2022-12-05 |
| 140 | Integracija softverske komponente | 5d → 5.88d | resources Zenith Tim 1 Član 1; Zenith Tim 1 Član 2; Zenith Tim 1 Član 3; Zenith Tim Lider 1; Zenith Tim 2 Član 1; Zenith Tim 2 Član 2 → Zenith Tim 1 Član 1; Zenith Tim 1 Član 2; Zenith Tim Lider 1; Zenith Tim 2 Član 1; Zenith Tim Lider 2; ETF Tim 2 Član 1; ETF Tim Lider 2 |
| 141 | Integracija hardverske komponente | 5d → 5.88d | resources Zenith Tim 2 Član 1; Zenith Tim 2 Član 2; Zenith Tim 2 Član 3; Zenith Tim Lider 2; Zenith Tim 1 Član 1; Zenith Tim 1 Član 2 → Zenith Tim 2 Član 1; Zenith Tim Lider 2; Zenith Tim 1 Član 1; Zenith Tim 1 Član 2; Zenith Tim Lider 1; ETF Tim 2 Član 1; ETF Tim Lider 2 |
| 143 | Integracija celokupnog sistema | 5d → 5.88d | resources ETF Tim 2 Član 1; Zenith Tim 1 Član 1; Zenith Tim 1 Član 2; Zenith Tim 2 Član 1; Zenith Tim 2 Član 2; Zenith Tim Lider 1 → ETF Tim 2 Član 1; Zenith Tim 1 Član 1; Zenith Tim 1 Član 2; Zenith Tim 2 Član 1; Zenith Tim 2 Član 2; Zenith Tim Lider 1; ETF Tim Lider 2; ETF Tim 2 Član 2 |
| 145 | **WP7 - Testiranje sistema** | 5d → 5.88d | constraint none → finish no later than 2023-03-05 |
| 147 | Planiranje testova | 5d → 5.88d | resources AppQuality Tim 1 Član 1; AppQuality Tim 1 Član 2; AppQuality Tim 1 Član 3; AppQuality Tim Lider 1 → AppQuality Tim 1 Član 1; AppQuality Tim 1 Član 2; AppQuality Tim 1 Član 3; AppQuality Tim Lider 1; AppQuality Tim 1 Član 4; ETF Tim 3 Član 1 |
| 148 | Izrada testova | 5d → 5.88d | resources AppQuality Tim 1 Član 1; AppQuality Tim 1 Član 2; AppQuality Tim 1 Član 3; AppQuality Tim Lider 1 → AppQuality Tim 1 Član 1; AppQuality Tim 1 Član 2; AppQuality Tim 1 Član 3; AppQuality Tim Lider 1; AppQuality Tim 1 Član 4; ETF Tim 3 Član 2 |
| 149 | Testiranje | 5d → 5.88d | resources AppQuality Tim 1 Član 1; AppQuality Tim 1 Član 2; AppQuality Tim 1 Član 3; AppQuality Tim 1 Član 4; AppQuality Tim 1 Član 5; AppQuality Tim Lider 1; ETF Tim 3 Član 4; ETF Tim 3 Član 5; ETF Tim Lider 3 → AppQuality Tim 1 Član 1; AppQuality Tim 1 Član 2; AppQuality Tim 1 Član 3; AppQuality Tim 1 Član 4; AppQuality Tim 1 Član 5; AppQuality Tim Lider 1; ETF Tim 3 Član 4; ETF Tim Lider 3 |
| 151 | Planiranje testova | 5d → 5.88d | resources AppQuality Tim 1 Član 1; AppQuality Tim 1 Član 2; AppQuality Tim 1 Član 3; AppQuality Tim Lider 1 → AppQuality Tim 1 Član 1; AppQuality Tim 1 Član 2; AppQuality Tim 1 Član 3; AppQuality Tim Lider 1; AppQuality Tim 1 Član 4; ETF Tim 3 Član 1 |
| 152 | Izrada testova | 5d → 5.88d | resources AppQuality Tim 1 Član 1; AppQuality Tim 1 Član 2; AppQuality Tim 1 Član 3; AppQuality Tim Lider 1 → AppQuality Tim 1 Član 1; AppQuality Tim 1 Član 2; AppQuality Tim 1 Član 3; AppQuality Tim Lider 1; AppQuality Tim 1 Član 4; ETF Tim 3 Član 2 |
| 153 | Testiranje | 5d → 5.88d | resources AppQuality Tim 1 Član 1; AppQuality Tim 1 Član 2; AppQuality Tim 1 Član 3; AppQuality Tim 1 Član 4; AppQuality Tim 1 Član 5; AppQuality Tim Lider 1; ETF Tim 3 Član 4; ETF Tim 3 Član 5; ETF Tim Lider 3 → AppQuality Tim 1 Član 1; AppQuality Tim 1 Član 2; AppQuality Tim 1 Član 3; AppQuality Tim 1 Član 4; AppQuality Tim 1 Član 5; AppQuality Tim Lider 1; ETF Tim 3 Član 4; ETF Tim Lider 3 |
| 155 | Planiranje testova | 5d → 5.88d | resources AppQuality Tim 1 Član 1; AppQuality Tim 1 Član 2; AppQuality Tim 1 Član 3; AppQuality Tim Lider 1 → AppQuality Tim 1 Član 1; AppQuality Tim 1 Član 2; AppQuality Tim 1 Član 3; AppQuality Tim Lider 1; AppQuality Tim 1 Član 4; ETF Tim 3 Član 1 |
| 156 | Izrada testova | 5d → 5.88d | resources AppQuality Tim 1 Član 1; AppQuality Tim 1 Član 2; AppQuality Tim 1 Član 3; AppQuality Tim Lider 1 → AppQuality Tim 1 Član 1; AppQuality Tim 1 Član 2; AppQuality Tim 1 Član 3; AppQuality Tim Lider 1; AppQuality Tim 1 Član 4; ETF Tim 3 Član 2 |
| 157 | Testiranje | 5d → 5.88d | resources AppQuality Tim 1 Član 1; AppQuality Tim 1 Član 2; AppQuality Tim 1 Član 3; AppQuality Tim 1 Član 4; AppQuality Tim 1 Član 5; AppQuality Tim Lider 1; ETF Tim 3 Član 4; ETF Tim 3 Član 5; ETF Tim Lider 3 → AppQuality Tim 1 Član 1; AppQuality Tim 1 Član 2; AppQuality Tim 1 Član 3; AppQuality Tim 1 Član 4; AppQuality Tim 1 Član 5; AppQuality Tim Lider 1; ETF Tim 3 Član 4; ETF Tim Lider 3 |
| 166 | **WP8 - Дисиминација и експлоатација** | 5d → 5.88d | constraint none → finish no later than 2023-05-05 |
| 167 | Izrada promotivnog materijala | 5d → 5.88d | resources ETF Tim 3 Član 1 [50%]; ETF Tim 3 Član 2 [50%] → ETF Tim 1 Član 1; ETF Tim 1 Član 2; ETF Tim Lider 1 |
| 168 | Izrada vizuelnog projekta | 5d → 5.88d | resources ETF Tim 3 Član 3; ETF Tim Lider 3 [80%]; ETF Tim 3 Član 4 → ETF Tim 2 Član 1; ETF Tim 2 Član 2; ETF Tim Lider 2; ETH Tim 1 Član 1 |
| 169 | Objavljivanje u medijima i na društvenim mrežama | 5d → 5.88d | resources ETF Tim 3 Član 5; ETF Tim Lider 3 [20%] → ETF Tim Lider 3; ETF Tim 3 Član 1; ETF Tim 3 Član 2; Medtronic Tim 1 Član 1 |
